# [KIMYEN]_Implementation_Shedule

Schedule from MS Project, 2017-08-09 to 2018-02-12, status date 2017-10-10, costs in $, A marks actual dates.
<Project Name>
The Centers for Disease Control and Prevention

## Calendars

- Standard: Mon-Fri 08:00-12:00, 13:00-17:00; Sat-Sun off. Exceptions (off unless hours are given): 2017-09-04 (Quốc khánh).

## Resources

| Resource | Rate | Cost per use |
| --- | --- | --- |
| Phát Danh | 8.75 | 17.5 |
| Hoàng Vũ | 8.75 | 8.75 |
| Quang Hoàng | 8.75 | 8.75 |
| Thị Phượng | 8.75 | 8.75 |
| Thành Luân | 8.75 | 8.75 |
| Thanh Lam | 8.75 | 8.75 |

## Schedule

| ID | WBS | Task | Duration | Start | Finish | Predecessors | Complete | Remaining | Baseline start | Baseline finish | Baseline duration | Baseline 1 start | Baseline 1 finish | Total slack | Free slack | Constraint | Resources | Work | Actual work | Cost | Baseline cost | Actual cost |
| --- | --- | --- | --- | --- | --- | --- | --- | --- | --- | --- | --- | --- | --- | --- | --- | --- | --- | --- | --- | --- | --- | --- |
| 1 | 1 | **KIM YẾN** | 132.12d | 2017-08-09 08:00 A | 2018-02-12 09:00 |  | 41% | 77.58d | 2017-08-09 08:00 | 2017-08-23 14:45 | 10.72d? | 2017-08-09 08:00 | 2017-11-02 17:00 | -5.88d | 0d | finish no later than 2017-09-15 17:00 |  | 686.2h | 247.7h | 8,839.25 | 1,443.75 | 2,954.88 |
| 2 | 1.1 | **Initiation** | 1d | 2017-08-09 08:00 A | 2017-08-09 17:00 A |  | 100% |  | 2017-08-09 08:00 | 2017-08-09 17:00 | 1d | 2017-08-09 08:00 | 2017-08-09 17:00 |  |  |  |  | 8h | 8h | 78.75 | 78.75 | 78.75 |
| 3 | 1.1.1 | Làm prototype nghiệp vụ quản lý hoa hồng | 1d | 2017-08-09 08:00 A | 2017-08-09 17:00 A |  | 100% |  | 2017-08-09 08:00 | 2017-08-09 17:00 | 1d | 2017-08-09 08:00 | 2017-08-09 17:00 |  |  | start no earlier than 2017-08-09 08:00 | Thị Phượng | 8h | 8h | 78.75 | 78.75 | 78.75 |
| 4 | 1.2 | **Analysis** | 49.12d | 2017-08-17 08:00 A | 2017-10-26 09:00 |  | 64% | 17.54d | 2017-08-17 08:00 | 2017-08-21 12:00 | 2.5d? | 2017-08-17 08:00 | 2017-10-26 09:00 | -5.85d | 0d |  |  | 220.2h | 110.2h | 2,574.25 | 376.25 | 1,375.5 |
| 5 | 1.2.1 | **Release 1** | 2.5d | 2017-08-17 08:00 A | 2017-08-21 12:00 |  | 50% | 1.25d | 2017-08-17 08:00 | 2017-08-21 12:00 | 2.5d | 2017-08-17 08:00 | 2017-08-21 12:00 | 1.22d |  |  |  | 32h | 16h | 376.25 | 376.25 | 201.25 |
| 6 | 1.2.1.1 | **Quản lý hoa hồng** | 2.5d | 2017-08-17 08:00 A | 2017-08-21 12:00 |  | 50% | 1.25d | 2017-08-17 08:00 | 2017-08-21 12:00 | 2.5d | 2017-08-17 08:00 | 2017-08-21 12:00 | 1.22d |  |  |  | 32h | 16h | 376.25 | 376.25 | 201.25 |
| 7 | 1.2.1.1.1 | Cập nhật cửa hàng | 3h | 2017-08-17 08:00 A | 2017-08-17 11:00 A |  | 100% |  | 2017-08-17 08:00 | 2017-08-17 11:00 | 3h | 2017-08-17 08:00 | 2017-08-17 11:00 |  |  |  | Thị Phượng | 3h | 3h | 35 | 35 | 35 |
| 8 | 1.2.1.1.2 | Thiết lập thông tin công ty | 1h | 2017-08-17 11:00 A | 2017-08-17 12:00 A | 7 | 100% |  | 2017-08-17 11:00 | 2017-08-17 12:00 | 1h | 2017-08-17 11:00 | 2017-08-17 12:00 |  |  |  | Thị Phượng | 1h | 1h | 17.5 | 17.5 | 17.5 |
| 9 | 1.2.1.1.3 | Danh mục mức hoa hồng theo doanh thu lũy kế | 2h | 2017-08-17 13:00 A | 2017-08-17 15:00 A | 8 | 100% |  | 2017-08-17 13:00 | 2017-08-17 15:00 | 2h | 2017-08-17 13:00 | 2017-08-17 15:00 |  |  |  | Thị Phượng | 2h | 2h | 26.25 | 26.25 | 26.25 |
| 10 | 1.2.1.1.4 | Cập nhật mức hoa hồng theo doanh thu lũy kế | 2h | 2017-08-17 15:00 A | 2017-08-17 17:00 A | 9 | 100% |  | 2017-08-17 15:00 | 2017-08-17 17:00 | 2h | 2017-08-17 15:00 | 2017-08-17 17:00 |  |  |  | Thị Phượng | 2h | 2h | 26.25 | 26.25 | 26.25 |
| 11 | 1.2.1.1.5 | Xem chi tiết mức hoa hồng theo doanh thu lũy kế | 3h | 2017-08-18 08:00 A | 2017-08-18 11:00 A | 10 | 100% |  | 2017-08-18 08:00 | 2017-08-18 11:00 | 3h | 2017-08-18 08:00 | 2017-08-18 11:00 |  |  |  | Thị Phượng | 3h | 3h | 35 | 35 | 35 |
| 12 | 1.2.1.1.6 | Cập nhật hội viên | 1h | 2017-08-18 11:00 A | 2017-08-18 12:00 A | 11 | 100% |  | 2017-08-18 11:00 | 2017-08-18 12:00 | 1h | 2017-08-18 11:00 | 2017-08-18 12:00 |  |  |  | Thị Phượng | 1h | 1h | 17.5 | 17.5 | 17.5 |
| 13 | 1.2.1.1.7 | Sơ đồ cây nhân viên hưởng hoa hồng | 4h | 2017-08-18 08:00 A | 2017-08-18 12:00 A |  | 100% |  | 2017-08-18 08:00 | 2017-08-18 12:00 | 4h | 2017-08-18 08:00 | 2017-08-18 12:00 |  |  | start no earlier than 2017-08-18 08:00 | Hoàng Vũ | 4h | 4h | 43.75 | 43.75 | 43.75 |
| 14 | 1.2.1.1.8 | Báo cáo chi tiết huê hồng từng nhân viên, nhập mã nhân viên để in báo cáo chi tiết | 4h | 2017-08-18 13:00 | 2017-08-18 17:00 | 12 |  |  | 2017-08-18 13:00 | 2017-08-18 17:00 | 4h | 2017-08-18 13:00 | 2017-08-18 17:00 | 0.97d | 0d |  | Thị Phượng | 4h |  | 43.75 | 43.75 |  |
| 15 | 1.2.1.1.9 | Báo cáo tổng hợp huê hồng từng nhân viên, nhập mã nhân viên để in báo cáo tổng hợp | 4h | 2017-08-21 08:00 | 2017-08-21 12:00 | 14 |  |  | 2017-08-21 08:00 | 2017-08-21 12:00 | 4h | 2017-08-21 08:00 | 2017-08-21 12:00 | 1.22d | 0.5d |  | Thị Phượng | 4h |  | 43.75 | 43.75 |  |
| 16 | 1.2.1.1.10 | Báo cáo chi tiết tất cả nhân viên hưởng huê hồng trong tháng | 4h | 2017-08-18 13:00 | 2017-08-18 17:00 | 13 |  |  | 2017-08-18 13:00 | 2017-08-18 17:00 | 4h | 2017-08-18 13:00 | 2017-08-18 17:00 | 0.47d | 0d |  | Hoàng Vũ | 4h |  | 43.75 | 43.75 |  |
| 17 | 1.2.1.1.11 | Báo cáo tổng hợp tất cả nhân viên hưởng huê hồng trong tháng | 4h | 2017-08-21 08:00 | 2017-08-21 12:00 | 16 |  |  | 2017-08-21 08:00 | 2017-08-21 12:00 | 4h | 2017-08-21 08:00 | 2017-08-21 12:00 | 0.97d | 0.62d |  | Hoàng Vũ | 4h |  | 43.75 | 43.75 |  |
| 18 | 1.2.2 | **Release 2** | 0.65d | 2017-08-21 13:00 A | 2017-08-22 09:12 A |  | 100% |  | 2017-08-17 08:00 | 2017-08-17 17:00 | 8h? | 2017-08-21 13:00 | 2017-08-22 09:12 |  |  |  |  | 5.2h | 5.2h | 159.25 |  | 159.25 |
| 19 | 1.2.2.1 | **Gộp đối tượng khách hàng** | 0.28d | 2017-08-21 13:00 A | 2017-08-21 15:12 A |  | 100% |  |  |  |  | 2017-08-21 13:00 | 2017-08-21 15:12 |  |  |  |  | 2.2h | 2.2h | 63 |  | 63 |
| 20 | 1.2.2.1.1 | Danh mục khách hàng | 0.5h | 2017-08-21 13:00 A | 2017-08-21 13:30 A | 15 | 100% |  |  |  |  | 2017-08-21 13:00 | 2017-08-21 13:30 |  |  |  | Thị Phượng | 0.5h | 0.5h | 13.12 |  | 13.12 |
| 21 | 1.2.2.1.2 | Cập nhật khách hàng | 0.5h | 2017-08-21 13:30 A | 2017-08-21 14:00 A | 20 | 100% |  |  |  |  | 2017-08-21 13:30 | 2017-08-21 14:00 |  |  |  | Thị Phượng | 0.5h | 0.5h | 13.12 |  | 13.12 |
| 22 | 1.2.2.1.3 | Xem chi tiết khách hàng | 0.5h | 2017-08-21 14:00 A | 2017-08-21 14:30 A | 21 | 100% |  |  |  |  | 2017-08-21 14:00 | 2017-08-21 14:30 |  |  |  | Thị Phượng | 0.5h | 0.5h | 13.12 |  | 13.12 |
| 23 | 1.2.2.1.4 | In lịch sử thông tin khách hàng | 0.2h | 2017-08-21 14:30 A | 2017-08-21 14:42 A | 22 | 100% |  |  |  |  | 2017-08-21 14:30 | 2017-08-21 14:42 |  |  |  | Thị Phượng | 0.2h | 0.2h | 10.5 |  | 10.5 |
| 24 | 1.2.2.1.5 | Import khách hàng | 0.5h | 2017-08-21 14:42 A | 2017-08-21 15:12 A | 23 | 100% |  |  |  |  | 2017-08-21 14:42 | 2017-08-21 15:12 |  |  |  | Thị Phượng | 0.5h | 0.5h | 13.12 |  | 13.12 |

Notes:
- 7: ASOFT_ERP910_DOCUMENT13_DETAIL_DESIGN2.PROJECTS09.KIMYEN20170817_Cap nhat cua hangPOSF0068_ Cap nhat cua hang.xlsx
- 8: ASOFT_ERP910_DOCUMENT13_DETAIL_DESIGN2.PROJECTS09.KIMYEN20170817_Thiet lap thong tin cong tyCIF0020 Thiet lap thong tin cong ty.xlsx
- 9: ASOFT_ERP910_DOCUMENT13_DETAIL_DESIGN2.PROJECTS09.KIMYEN20170817_Danh muc muc hoa hong theo doanh thu tich luyPOSF0120_Danh muc muc hue hong theo doanh thu tich luy.xlsx
- 10: ASOFT_ERP910_DOCUMENT13_DETAIL_DESIGN2.PROJECTS09.KIMYEN20170817_Cap nhat muc hoa hong theo doanh thu tich luyPOSF0121_Cap nhat muc hue hong theo doanh thu tich luy.xlsx
- 11: ASOFT_ERP910_DOCUMENT13_DETAIL_DESIGN2.PROJECTS09.KIMYEN20170818_Xem chi tiet muc hoa hong theo doanh thu tich luyPOSF0122_Xem chi tiet muc hue hong theo doanh thu tich luy.xlsx
- 13: Tài liệu phân tích: / SVN_ERP9010_DOCUMENT13_DETAIL_DESIGN2.PROJECTS09.KIMYEN20170818_So do cay hoa hong
- 19: Gộp khách hàng bên CRM vào hội viên bên POS
- 20: Chỉ chỉnh sửa store không cần DEV sửa code
- 24: Chỉ chỉnh sửa store không cần DEV

| ID | WBS | Task | Duration | Start | Finish | Predecessors | Complete | Remaining | Baseline start | Baseline finish | Baseline duration | Baseline 1 start | Baseline 1 finish | Total slack | Free slack | Constraint | Resources | Work | Actual work | Cost | Actual cost |
| --- | --- | --- | --- | --- | --- | --- | --- | --- | --- | --- | --- | --- | --- | --- | --- | --- | --- | --- | --- | --- | --- |
| 25 | 1.2.2.2 | **Call center** | 0.38d | 2017-08-21 15:12 A | 2017-08-22 09:12 A |  | 100% |  |  |  |  | 2017-08-21 15:12 | 2017-08-22 09:12 |  |  |  |  | 3h | 3h | 96.25 | 96.25 |
| 26 | 1.2.2.2.1 | Hỗ trợ | 0.5h | 2017-08-21 15:12 A | 2017-08-21 15:42 A | 24 | 100% |  |  |  |  | 2017-08-21 15:12 | 2017-08-21 15:42 |  |  |  | Thị Phượng | 0.5h | 0.5h | 13.12 | 13.12 |
| 27 | 1.2.2.2.2 | Gọi đến | 0.3h | 2017-08-21 15:42 A | 2017-08-21 16:00 A | 26 | 100% |  |  |  |  | 2017-08-21 15:42 | 2017-08-21 16:00 |  |  |  | Thị Phượng | 0.3h | 0.3h | 11.38 | 11.38 |
| 28 | 1.2.2.2.3 | Lịch sử cuộc gọi | 0.3h | 2017-08-21 16:00 A | 2017-08-21 16:18 A | 27 | 100% |  |  |  |  | 2017-08-21 16:00 | 2017-08-21 16:18 |  |  |  | Thị Phượng | 0.3h | 0.3h | 11.38 | 11.38 |
| 29 | 1.2.2.2.4 | Công nợ | 0.3h | 2017-08-21 16:18 A | 2017-08-21 16:36 A | 28 | 100% |  |  |  |  | 2017-08-21 16:18 | 2017-08-21 16:36 |  |  |  | Thị Phượng | 0.3h | 0.3h | 11.38 | 11.38 |
| 30 | 1.2.2.2.5 | Thêm nhanh khách hàng | 0.3h | 2017-08-21 16:36 A | 2017-08-21 16:54 A | 29 | 100% |  |  |  |  | 2017-08-21 16:36 | 2017-08-21 16:54 |  |  |  | Thị Phượng | 0.3h | 0.3h | 11.38 | 11.38 |
| 31 | 1.2.2.2.6 | Thêm nhanh đơn hàng | 0.3h | 2017-08-21 16:54 A | 2017-08-22 08:12 A | 30 | 100% |  |  |  |  | 2017-08-21 16:54 | 2017-08-22 08:12 |  |  |  | Thị Phượng | 0.3h | 0.3h | 11.38 | 11.38 |
| 32 | 1.2.2.2.7 | Chọn khách hàng | 0.5h | 2017-08-22 08:12 A | 2017-08-22 08:42 A | 31 | 100% |  |  |  |  | 2017-08-22 08:12 | 2017-08-22 08:42 |  |  |  | Thị Phượng | 0.5h | 0.5h | 13.12 | 13.12 |
| 33 | 1.2.2.2.8 | Xem nhanh công nợ | 0.5h | 2017-08-22 08:42 A | 2017-08-22 09:12 A | 32 | 100% |  |  |  |  | 2017-08-22 08:42 | 2017-08-22 09:12 |  |  |  | Thị Phượng | 0.5h | 0.5h | 13.12 | 13.12 |
| 34 | 1.2.3 | **Release 3** | 19.27d | 2017-09-21 08:00 A | 2017-10-18 10:12 |  | 94% | 1.25d | 2017-08-17 08:00 | 2017-08-17 17:00 | 8h? | 2017-09-21 08:00 | 2017-10-18 10:12 | 0d |  |  |  | 94h | 77h | 1,076.25 | 892.5 |
| 35 | 1.2.3.1 | **Quản lý công việc** | 19.27d | 2017-09-21 08:00 A | 2017-10-18 10:12 |  | 94% | 1.25d |  |  |  | 2017-09-21 08:00 | 2017-10-18 10:12 | 0d |  |  |  | 94h | 77h | 1,076.25 | 892.5 |
| 36 | 1.2.3.1.1 | Thiết lập hệ thống | 2h | 2017-09-21 08:00 A | 2017-09-21 10:00 A | 33 | 100% |  |  |  |  | 2017-09-21 08:00 | 2017-09-21 10:00 |  |  | start no earlier than 2017-09-21 08:00 | Thị Phượng | 2h | 2h | 26.25 | 26.25 |
| 37 | 1.2.3.1.2 | Danh mục thiết lập thời gian làm việc | 3h | 2017-09-21 10:00 A | 2017-09-21 14:00 A | 36 | 100% |  |  |  |  | 2017-09-21 10:00 | 2017-09-21 14:00 |  |  |  | Thị Phượng | 3h | 3h | 35 | 35 |
| 38 | 1.2.3.1.3 | Xem chi tiết thời gian làm việc | 3h | 2017-09-21 14:00 A | 2017-09-21 17:00 A | 37 | 100% |  |  |  |  | 2017-09-21 14:00 | 2017-09-21 17:00 |  |  |  | Thị Phượng | 3h | 3h | 35 | 35 |
| 39 | 1.2.3.1.4 | Thiết lập thời gian làm việc | 3h | 2017-09-21 09:12 A | 2017-09-21 13:12 A | 38 | 100% |  |  |  |  | 2017-09-21 09:12 | 2017-09-21 13:12 |  |  | start no earlier than 2017-09-21 09:12 | Thị Phượng | 3h | 3h | 35 | 35 |
| 40 | 1.2.3.1.5 | Thông báo | 4h | 2017-09-21 13:12 | 2017-09-22 08:12 | 39 |  |  |  |  |  | 2017-09-21 13:12 | 2017-09-22 08:12 | -15.15d | 0d |  | Thị Phượng | 4h |  | 43.75 |  |
| 41 | 1.2.3.1.6 | Danh mục thông báo | 3h | 2017-09-22 08:12 A | 2017-09-22 11:12 A | 40, 188 | 100% |  |  |  |  | 2017-09-22 08:12 | 2017-09-22 11:12 |  |  |  | Thị Phượng | 3h | 3h | 35 | 35 |
| 42 | 1.2.3.1.7 | Cập nhật thông báo | 4h | 2017-09-22 11:12 A | 2017-09-22 16:12 A | 41 | 100% |  |  |  |  | 2017-09-22 11:12 | 2017-09-22 16:12 |  |  |  | Thị Phượng | 4h | 4h | 43.75 | 43.75 |
| 43 | 1.2.3.1.8 | Xem thông báo | 3h | 2017-09-22 16:12 A | 2017-09-25 10:12 A | 42 | 100% |  |  |  |  | 2017-09-22 16:12 | 2017-09-25 10:12 |  |  |  | Thị Phượng | 3h | 3h | 35 | 35 |
| 44 | 1.2.3.1.9 | Danh mục quy trình | 3h | 2017-10-05 14:12 A | 2017-10-06 08:12 A | 43, 206 | 100% |  |  |  |  | 2017-10-05 14:12 | 2017-10-06 08:12 |  |  |  | Thị Phượng | 3h | 3h | 35 | 35 |
| 45 | 1.2.3.1.10 | Xem chi tiết quy trình | 3h | 2017-10-06 08:12 A | 2017-10-06 11:12 A | 44 | 100% |  |  |  |  | 2017-10-06 08:12 | 2017-10-06 11:12 |  |  |  | Thị Phượng | 3h | 3h | 35 | 35 |
| 46 | 1.2.3.1.11 | Cập nhật quy trình | 3h | 2017-10-06 11:12 A | 2017-10-06 15:12 A | 45 | 100% |  |  |  |  | 2017-10-06 11:12 | 2017-10-06 15:12 |  |  |  | Thị Phượng | 3h | 3h | 35 | 35 |
| 47 | 1.2.3.1.12 | Danh mục bước | 3h | 2017-10-06 15:12 A | 2017-10-09 09:12 A | 46 | 100% |  |  |  |  | 2017-10-06 15:12 | 2017-10-09 09:12 |  |  |  | Thị Phượng | 3h | 3h | 35 | 35 |
| 48 | 1.2.3.1.13 | Xem chi tiết bước | 3h | 2017-10-09 09:12 A | 2017-10-09 13:12 A | 47 | 100% |  |  |  |  | 2017-10-09 09:12 | 2017-10-09 13:12 |  |  |  | Thị Phượng | 3h | 3h | 35 | 35 |
| 49 | 1.2.3.1.14 | Cập nhật bước | 3h | 2017-10-09 13:12 A | 2017-10-09 16:12 A | 48 | 100% |  |  |  |  | 2017-10-09 13:12 | 2017-10-09 16:12 |  |  |  | Thị Phượng | 3h | 3h | 35 | 35 |
| 50 | 1.2.3.1.15 | Cập nhật mẫu công việc theo bước | 4h | 2017-10-09 16:12 A | 2017-10-10 11:12 A | 49 | 100% |  |  |  |  | 2017-10-09 16:12 | 2017-10-10 11:12 |  |  |  | Thị Phượng | 4h | 4h | 43.75 | 43.75 |
| 51 | 1.2.3.1.16 | Danh mục trạng thái | 3h | 2017-10-10 11:12 A | 2017-10-10 15:12 A | 50 | 100% |  |  |  |  | 2017-10-10 11:12 | 2017-10-10 15:12 |  |  |  | Thị Phượng | 3h | 3h | 35 | 35 |
| 52 | 1.2.3.1.17 | Xem chi tiết trạng thái | 3h | 2017-10-10 15:12 A | 2017-10-11 09:12 A | 51 | 100% |  |  |  |  | 2017-10-10 15:12 | 2017-10-11 09:12 |  |  |  | Thị Phượng | 3h | 3h | 35 | 35 |
| 53 | 1.2.3.1.18 | Cập nhật trạng thái | 2h | 2017-10-11 09:12 A | 2017-10-11 11:12 A | 52 | 100% |  |  |  |  | 2017-10-11 09:12 | 2017-10-11 11:12 |  |  |  | Thị Phượng | 2h | 2h | 26.25 | 26.25 |
| 54 | 1.2.3.1.19 | Danh sách mẫu dự án/nhóm công việc | 3h | 2017-10-11 11:12 A | 2017-10-11 15:12 A | 53 | 100% |  |  |  |  | 2017-10-11 11:12 | 2017-10-11 15:12 |  |  |  | Thị Phượng | 3h | 3h | 35 | 35 |
| 55 | 1.2.3.1.20 | Xem chi tiết mẫu dự án/nhóm công việc | 3h | 2017-10-11 15:12 A | 2017-10-12 09:12 A | 54 | 100% |  |  |  |  | 2017-10-11 15:12 | 2017-10-12 09:12 |  |  |  | Thị Phượng | 3h | 3h | 35 | 35 |
| 56 | 1.2.3.1.21 | Cập nhật mẫu dự án/nhóm công việc | 3h | 2017-10-12 09:12 A | 2017-10-12 13:12 A | 55 | 100% |  |  |  |  | 2017-10-12 09:12 | 2017-10-12 13:12 |  |  |  | Thị Phượng | 3h | 3h | 35 | 35 |
| 57 | 1.2.3.1.22 | Danh sách dự án/nhóm công việc (Dạng List) | 4h | 2017-10-12 13:12 A | 2017-10-13 08:12 | 56 | 90% | 0.4h |  |  |  | 2017-10-12 13:12 | 2017-10-13 08:12 | -26.65d | 0d |  | Thị Phượng | 4h |  | 43.75 |  |
| 58 | 1.2.3.1.23 | Danh sách dự án/nhóm công việc (Dạng Kanban) | 5h | 2017-10-13 08:12 A | 2017-10-13 14:12 | 57 | 90% | 0.5h |  |  |  | 2017-10-13 08:12 | 2017-10-13 14:12 | -30.15d | 0d |  | Thị Phượng | 5h |  | 52.5 |  |
| 59 | 1.2.3.1.24 | Danh sách dự án/nhóm công việc (Dạng Gantt) | 4h | 2017-10-13 14:12 A | 2017-10-16 09:12 | 58 | 90% | 0.4h |  |  |  | 2017-10-13 14:12 | 2017-10-16 09:12 | -29.9d | 0d |  | Thị Phượng | 4h |  | 43.75 |  |
| 60 | 1.2.3.1.25 | Cập nhật dự án/nhóm công việc | 4h | 2017-10-16 09:12 A | 2017-10-16 14:12 | 59 | 90% | 0.4h |  |  |  | 2017-10-16 09:12 | 2017-10-16 14:12 | 0d |  |  | Thị Phượng | 4h | 4h | 43.75 | 43.75 |
| 61 | 1.2.3.1.26 | Xem dự án/nhóm công việc | 4h | 2017-10-16 14:12 A | 2017-10-17 09:12 | 60 | 90% | 0.4h |  |  |  | 2017-10-16 14:12 | 2017-10-17 09:12 | 0d |  |  | Thị Phượng | 4h | 4h | 43.75 | 43.75 |
| 62 | 1.2.3.1.27 | Chọn hợp đồng | 3h | 2017-10-17 09:12 A | 2017-10-17 13:12 A | 61 | 100% |  |  |  |  | 2017-10-17 09:12 | 2017-10-17 13:12 |  |  |  | Thị Phượng | 3h | 3h | 35 | 35 |
| 63 | 1.2.3.1.28 | Chọn nhân sự | 3h | 2017-10-17 13:12 A | 2017-10-17 16:12 A | 62 | 100% |  |  |  |  | 2017-10-17 13:12 | 2017-10-17 16:12 |  |  |  | Thị Phượng | 3h | 3h | 35 | 35 |
| 64 | 1.2.3.1.29 | Chọn phòng ban | 3h | 2017-10-17 16:12 A | 2017-10-18 10:12 A | 63 | 100% |  |  |  |  | 2017-10-17 16:12 | 2017-10-18 10:12 |  |  |  | Thị Phượng | 3h | 3h | 35 | 35 |

Notes:
- 25: sửa những chỗ liên quan khách hàng
- 32: Chỉ chỉnh sửa store không cần DEV sửa code
- 39: Lưu ý bổ sung thŕnh dạng 3 mŕn hěnh Danh mục, cập nhật vŕ xem chi tiết / Tŕi liệu: ASOFT_ERP910_DOCUMENT13_DETAIL_DESIGN2.PROJECTS09.KIMYEN20170921_Phrase 3_Quan ly cong viec20170921_Thiet lap thoi gian lam viec
- 41: Đă phân tích xong: 3 mŕn hěnh để chung 1 folder / Link: ASOFT_ERP910_DOCUMENT13_DETAIL_DESIGN2.PROJECTS09.KIMYEN20170921_Phrase 3_Quan ly cong viec20170926_Danh muc thong bao
- 42: Đă phân tích xong: 3 mŕn hěnh để chung 1 folder / Link: ASOFT_ERP910_DOCUMENT13_DETAIL_DESIGN2.PROJECTS09.KIMYEN20170921_Phrase 3_Quan ly cong viec20170926_Danh muc thong bao
- 43: Đă phân tích xong: 3 mŕn hěnh để chung 1 folder / Link: ASOFT_ERP910_DOCUMENT13_DETAIL_DESIGN2.PROJECTS09.KIMYEN20170921_Phrase 3_Quan ly cong viec20170926_Danh muc thong bao
- 44: f:ASOFT_ERP910_DOCUMENT13_DETAIL_DESIGN2.PROJECTS09.KIMYEN20170921_Phrase 3_Quan ly cong viec20171002_Danh muc quy trinh
- 45: f:ASOFT_ERP910_DOCUMENT13_DETAIL_DESIGN2.PROJECTS09.KIMYEN20170921_Phrase 3_Quan ly cong viec20171002_Danh muc quy trinh
- 46: f:ASOFT_ERP910_DOCUMENT13_DETAIL_DESIGN2.PROJECTS09.KIMYEN20170921_Phrase 3_Quan ly cong viec20171002_Danh muc quy trinh
- 47: f:ASOFT_ERP910_DOCUMENT13_DETAIL_DESIGN2.PROJECTS09.KIMYEN20170921_Phrase 3_Quan ly cong viec20171003_Danh muc buoc
- 48: f:ASOFT_ERP910_DOCUMENT13_DETAIL_DESIGN2.PROJECTS09.KIMYEN20170921_Phrase 3_Quan ly cong viec20171003_Danh muc buoc
- 49: f:ASOFT_ERP910_DOCUMENT13_DETAIL_DESIGN2.PROJECTS09.KIMYEN20170921_Phrase 3_Quan ly cong viec20171003_Danh muc buoc
- 50: ASOFT_ERP910_DOCUMENT13_DETAIL_DESIGN2.PROJECTS09.KIMYEN20170921_Phrase 3_Quan ly cong viec20171003_Danh muc buocTMF1023_Cap nhat mau cong viec theo buoc.xlsx
- 51: ASOFT_ERP910_DOCUMENT13_DETAIL_DESIGN2.PROJECTS09.KIMYEN20170921_Phrase 3_Quan ly cong viec20171004_Danh muc trang thaiTMF1030_Danh muc trang thai.xlsx
- 52: ASOFT_ERP910_DOCUMENT13_DETAIL_DESIGN2.PROJECTS09.KIMYEN20170921_Phrase 3_Quan ly cong viec20171004_Danh muc trang thaiTMF1032_Xem chi tiet trang thai.xlsx
- 53: ASOFT_ERP910_DOCUMENT13_DETAIL_DESIGN2.PROJECTS09.KIMYEN20170921_Phrase 3_Quan ly cong viec20171004_Danh muc trang thaiTMF1031_Cap nhat trang thai.xlsx
- 54: ASOFT_ERP910_DOCUMENT13_DETAIL_DESIGN2.PROJECTS09.KIMYEN20170921_Phrase 3_Quan ly cong viec20171009_Danh muc mau du an nhom cong viecTMF2000_Danh sach mau du an cong viec.xlsx
- 55: ASOFT_ERP910_DOCUMENT13_DETAIL_DESIGN2.PROJECTS09.KIMYEN20170921_Phrase 3_Quan ly cong viec20171009_Danh muc mau du an nhom cong viecTMF2002_Xem chi tiet mau du an nhom cong viec.xlsx
- 56: ASOFT_ERP910_DOCUMENT13_DETAIL_DESIGN2.PROJECTS09.KIMYEN20170921_Phrase 3_Quan ly cong viec20171009_Danh muc mau du an nhom cong viecTMF2001_Cap nhat mau du an nhom cong viec.xlsx
- 57: ASOFT_ERP910_DOCUMENT13_DETAIL_DESIGN2.PROJECTS09.KIMYEN20170921_Phrase 3_Quan ly cong viec20171012_Danh muc da an nhom cong viecTMF2010_Danh sach du an nhom cong viec.xlsx
- 58: ASOFT_ERP910_DOCUMENT13_DETAIL_DESIGN2.PROJECTS09.KIMYEN20170921_Phrase 3_Quan ly cong viec20171012_Danh muc da an nhom cong viecTMF2010_Danh sach du an nhom cong viec.xlsx
- 59: ASOFT_ERP910_DOCUMENT13_DETAIL_DESIGN2.PROJECTS09.KIMYEN20170921_Phrase 3_Quan ly cong viec20171012_Danh muc da an nhom cong viecTMF2010_Danh sach du an nhom cong viec.xlsx
- 60: ASOFT_ERP910_DOCUMENT13_DETAIL_DESIGN2.PROJECTS09.KIMYEN20170921_Phrase 3_Quan ly cong viec20171012_Danh muc da an nhom cong viecTMF2011_Cap nhat du an nhom cong viec.xlsx
- 61: ASOFT_ERP910_DOCUMENT13_DETAIL_DESIGN2.PROJECTS09.KIMYEN20170921_Phrase 3_Quan ly cong viec20171012_Danh muc da an nhom cong viecTMF2012_Xem chi tiet du an nhom cong viec.xlsx
- 62: ASOFT_ERP910_DOCUMENT13_DETAIL_DESIGN2.PROJECTS09.KIMYEN20170921_Phrase 3_Quan ly cong viec20171019_Chon hop dongTMF9001_Chon hop dong.xlsx
- 63: Sử dụng chọn người důng trong hệ thống không phát triển mới
- 64: ASOFT_ERP910_DOCUMENT13_DETAIL_DESIGN2.PROJECTS09.KIMYEN20170921_Phrase 3_Quan ly cong viec20171018_Chon phong banTMF9002_Chon phong ban.xlsx

| ID | WBS | Task | Type | Duration | Start | Finish | Predecessors | Complete | Remaining | Baseline start | Baseline finish | Baseline duration | Baseline 1 start | Baseline 1 finish | Total slack | Free slack | Constraint | Resources | Work | Actual work | Cost | Actual cost |
| --- | --- | --- | --- | --- | --- | --- | --- | --- | --- | --- | --- | --- | --- | --- | --- | --- | --- | --- | --- | --- | --- | --- |
| 65 | 1.2.4 | **Release 4** |  | 11.12d | 2017-10-11 08:00 A | 2017-10-26 09:00 |  | 37% | 7.06d |  |  |  | 2017-10-11 08:00 | 2017-10-26 09:00 | -6d | 0d |  |  | 89h | 12h | 962.5 | 122.5 |
| 66 | 1.2.4.1 | **Quản lý công việc** |  | 11.12d | 2017-10-11 08:00 A | 2017-10-26 09:00 |  | 37% | 7.06d |  |  |  | 2017-10-11 08:00 | 2017-10-26 09:00 | -6d | 0d |  |  | 89h | 12h | 962.5 | 122.5 |
| 67 | 1.2.4.1.1 | Danh sách công việc (Dạng List) |  | 3h | 2017-10-11 08:00 A | 2017-10-11 11:00 |  | 80% | 0.6h |  |  |  | 2017-10-11 08:00 | 2017-10-11 11:00 | -36.62d | 0d | start no earlier than 2017-10-11 08:00 | Hoàng Vũ | 3h |  | 35 |  |
| 68 | 1.2.4.1.2 | Danh sách công việc (Dạng Kanban) |  | 5h | 2017-10-11 11:00 A | 2017-10-11 17:00 | 67 | 80% | 1h |  |  |  | 2017-10-11 11:00 | 2017-10-11 17:00 | -27d | 0d |  | Hoàng Vũ | 5h |  | 52.5 |  |
| 69 | 1.2.4.1.3 | Danh sách công việc (Dạng Lịch) |  | 3h | 2017-10-12 08:00 A | 2017-10-12 11:00 | 68 | 80% | 0.6h |  |  |  | 2017-10-12 08:00 | 2017-10-12 11:00 | -26.88d | 0d |  | Hoàng Vũ | 3h |  | 35 |  |
| 70 | 1.2.4.1.4 | Danh sách công việc (Dạng Gantt) |  | 4h | 2017-10-12 11:00 A | 2017-10-12 16:00 | 69 | 80% | 0.8h |  |  |  | 2017-10-12 11:00 | 2017-10-12 16:00 | -27.12d | 0d |  | Hoàng Vũ | 4h |  | 43.75 |  |
| 71 | 1.2.4.1.5 | Import công việc |  | 8h | 2017-10-12 16:00 A | 2017-10-13 16:00 | 70 | 90% | 0.8h |  |  |  | 2017-10-12 16:00 | 2017-10-13 16:00 | 0d |  |  | Hoàng Vũ | 8h | 8h | 78.75 | 78.75 |
| 72 | 1.2.4.1.6 | Cập nhật công việc |  | 5h | 2017-10-13 16:00 A | 2017-10-16 12:00 | 71 | 80% | 1h |  |  |  | 2017-10-13 16:00 | 2017-10-16 12:00 | -38.62d | 0d |  | Hoàng Vũ | 5h |  | 52.5 |  |
| 73 | 1.2.4.1.7 | Xem thông tin công việc |  | 3h | 2017-10-16 13:00 A | 2017-10-16 16:00 | 72 | 70% | 0.9h |  |  |  | 2017-10-16 13:00 | 2017-10-16 16:00 | -38.5d | 0d |  | Hoàng Vũ | 3h |  | 35 |  |
| 74 | 1.2.4.1.8 | Chọn công việc trước |  | 4h | 2017-10-16 16:00 A | 2017-10-17 11:00 | 73 | 90% | 0.4h |  |  |  | 2017-10-16 16:00 | 2017-10-17 11:00 | 0d |  |  | Hoàng Vũ | 4h | 4h | 43.75 | 43.75 |
| 75 | 1.2.4.1.9 | Nhập checklist công việc |  | 2h | 2017-10-17 11:00 | 2017-10-17 14:00 | 74 |  |  |  |  |  | 2017-10-17 11:00 | 2017-10-17 14:00 | -38.5d | 0d |  | Hoàng Vũ | 2h |  | 26.25 |  |
| 76 | 1.2.4.1.10 | Cập nhật công việc hàng loạt |  | 4h | 2017-10-17 14:00 A | 2017-10-18 09:00 | 75 | 90% | 0.4h |  |  |  | 2017-10-17 14:00 | 2017-10-18 09:00 | -41.62d | 0d |  | Hoàng Vũ | 4h |  | 43.75 |  |
| 77 | 1.2.4.1.11 | Thiết kế Dasboard chung |  | 8h | 2017-10-18 09:00 | 2017-10-19 09:00 | 76 |  |  |  |  |  | 2017-10-18 09:00 | 2017-10-19 09:00 | -41.62d | 0d |  | Hoàng Vũ | 8h |  | 78.75 |  |
| 78 | 1.2.4.1.12 | Thiết lập thời gian lặp lại |  | 4h | 2017-10-19 09:00 | 2017-10-19 14:00 | 77 |  |  |  |  |  | 2017-10-19 09:00 | 2017-10-19 14:00 | -41.62d | 0d |  | Hoàng Vũ | 4h |  | 43.75 |  |
| 79 | 1.2.4.1.13 | Màn hình calendar hiển thị theo dạng lịch |  | 4h | 2017-10-19 14:00 | 2017-10-20 09:00 | 78 |  |  |  |  |  | 2017-10-19 14:00 | 2017-10-20 09:00 | -41.62d | 0d |  | Hoàng Vũ | 4h |  | 43.75 |  |
| 80 | 1.2.4.1.14 | Màn hình calendar hiển thị theo dạng list |  | 6h | 2017-10-20 09:00 | 2017-10-20 16:00 | 79 |  |  |  |  |  | 2017-10-20 09:00 | 2017-10-20 16:00 | -41.62d | 0d |  | Hoàng Vũ | 6h |  | 61.25 |  |
| 81 | 1.2.4.1.15 | Lập lịch |  | 4h | 2017-10-20 16:00 | 2017-10-23 11:00 | 80 |  |  |  |  |  | 2017-10-20 16:00 | 2017-10-23 11:00 | -41.62d | 0d |  | Hoàng Vũ | 4h |  | 43.75 |  |
| 82 | 1.2.4.1.16 | Gửi mail (cho Nhân sự tham gia) -> gửi mail nội bộ |  | 4h | 2017-10-23 11:00 | 2017-10-23 16:00 | 81 |  |  |  |  |  | 2017-10-23 11:00 | 2017-10-23 16:00 | -41.62d | 0d |  | Hoàng Vũ | 4h |  | 43.75 |  |
| 83 | 1.2.4.1.17 | Thiết lập gửi mail |  | 4h | 2017-10-23 16:00 | 2017-10-24 11:00 | 82 |  |  |  |  |  | 2017-10-23 16:00 | 2017-10-24 11:00 | -41.62d | 0d |  | Hoàng Vũ | 4h |  | 43.75 |  |
| 84 | 1.2.4.1.18 | Thiết lập cảnh báo |  | 4h | 2017-10-24 11:00 | 2017-10-24 16:00 | 83 |  |  |  |  |  | 2017-10-24 11:00 | 2017-10-24 16:00 | -41.62d | 0d |  | Hoàng Vũ | 4h |  | 43.75 |  |
| 85 | 1.2.4.1.19 | Focus sheet |  | 4h | 2017-10-24 16:00 | 2017-10-25 11:00 | 84 |  |  |  |  |  | 2017-10-24 16:00 | 2017-10-25 11:00 | -41.62d | 0d |  | Hoàng Vũ | 4h |  | 43.75 |  |
| 86 | 1.2.4.1.20 | Báo cáo công việc theo dự án |  | 3h | 2017-10-25 11:00 | 2017-10-25 15:00 | 85 |  |  |  |  |  | 2017-10-25 11:00 | 2017-10-25 15:00 | -41.38d | 0d |  | Hoàng Vũ | 3h |  | 35 |  |
| 87 | 1.2.4.1.21 | Báo cáo công việc theo nhân viên |  | 3h | 2017-10-25 15:00 | 2017-10-26 09:00 | 86 |  |  |  |  |  | 2017-10-25 15:00 | 2017-10-26 09:00 | -41d | 0d |  | Hoàng Vũ | 3h |  | 35 |  |
| 88 | 1.3 | Analysis Completed | milestone | 0d | 2017-08-17 08:00 | 2017-08-17 08:00 |  |  |  | 2017-08-17 08:00 | 2017-08-17 08:00 | 0d | 2017-08-17 08:00 | 2017-08-17 08:00 | 21d |  |  |  |  |  |  |  |

| ID | WBS | Task | Duration | Start | Finish | Predecessors | Complete | Remaining | Baseline start | Baseline finish | Baseline duration | Baseline 1 start | Baseline 1 finish | Total slack | Free slack | Constraint | Resources | Work | Actual work | Cost | Baseline cost | Actual cost |
| --- | --- | --- | --- | --- | --- | --- | --- | --- | --- | --- | --- | --- | --- | --- | --- | --- | --- | --- | --- | --- | --- | --- |
| 89 | 1.4 | **Development** | 119.88d | 2017-08-17 11:00 A | 2018-02-02 10:00 |  | 47% | 63.54d | 2017-08-17 08:00 | 2017-08-23 09:00 | 4.12d? | 2017-08-17 11:00 | 2017-10-27 12:00 | 0d |  |  |  | 284.5h | 129.5h | 3,163.12 | 516.25 | 1,500.62 |
| 90 | 1.4.1 | **Release 1** | 3.75d | 2017-08-17 11:00 A | 2017-08-23 09:00 |  | 42% | 2.19d | 2017-08-17 11:00 | 2017-08-23 09:00 | 3.75d | 2017-08-17 11:00 | 2017-08-23 09:00 | 0.34d | 0d |  |  | 48h | 20h | 516.25 | 516.25 | 236.25 |
| 91 | 1.4.1.1 | **Quản lý hoa hồng** | 3.75d | 2017-08-17 11:00 A | 2017-08-23 09:00 |  | 42% | 2.19d | 2017-08-17 11:00 | 2017-08-23 09:00 | 3.75d | 2017-08-17 11:00 | 2017-08-23 09:00 | 0.34d |  |  |  | 48h | 20h | 516.25 | 516.25 | 236.25 |
| 92 | 1.4.1.1.1 | Cập nhật cửa hàng | 4h | 2017-08-17 11:00 A | 2017-08-17 16:00 A | 7 | 100% |  | 2017-08-17 11:00 | 2017-08-17 16:00 | 4h | 2017-08-17 11:00 | 2017-08-17 16:00 |  |  |  | Quang Hoàng | 4h | 4h | 43.75 | 43.75 | 43.75 |
| 93 | 1.4.1.1.2 | Thiết lập thông tin công ty | 1h | 2017-08-17 16:00 A | 2017-08-17 17:00 A | 92, 8 | 100% |  | 2017-08-17 16:00 | 2017-08-17 17:00 | 1h | 2017-08-17 16:00 | 2017-08-17 17:00 |  |  |  | Thành Luân | 1h | 1h | 17.5 | 17.5 | 17.5 |
| 94 | 1.4.1.1.3 | Danh mục mức hoa hồng theo doanh thu lũy kế | 2h | 2017-08-18 08:00 A | 2017-08-18 10:00 A | 93, 9 | 100% |  | 2017-08-18 08:00 | 2017-08-18 10:00 | 2h | 2017-08-18 08:00 | 2017-08-18 10:00 |  |  |  | Thành Luân | 2h | 2h | 26.25 | 26.25 | 26.25 |
| 95 | 1.4.1.1.4 | Cập nhật mức hoa hồng theo doanh thu lũy kế | 3h | 2017-08-18 10:00 A | 2017-08-18 14:00 A | 94, 10 | 100% |  | 2017-08-18 10:00 | 2017-08-18 14:00 | 3h | 2017-08-18 10:00 | 2017-08-18 14:00 |  |  |  | Thành Luân | 3h | 3h | 35 | 35 | 35 |
| 96 | 1.4.1.1.5 | Xem chi tiết mức hoa hồng theo doanh thu lũy kế | 3h | 2017-08-18 14:00 A | 2017-08-18 17:00 A | 95, 11 | 100% |  | 2017-08-18 14:00 | 2017-08-18 17:00 | 3h | 2017-08-18 14:00 | 2017-08-18 17:00 |  |  |  | Thành Luân | 3h | 3h | 35 | 35 | 35 |
| 97 | 1.4.1.1.6 | Cập nhật hội viên | 1h | 2017-08-21 08:00 A | 2017-08-21 09:00 A | 96, 12 | 100% |  | 2017-08-21 08:00 | 2017-08-21 09:00 | 1h | 2017-08-21 08:00 | 2017-08-21 09:00 |  |  |  | Thành Luân | 1h | 1h | 17.5 | 17.5 | 17.5 |
| 98 | 1.4.1.1.7 | Sơ đồ cây nhân viên hưởng hoa hồng | 6h | 2017-08-18 13:00 A | 2017-08-21 10:00 A | 13, 92 | 100% |  | 2017-08-18 13:00 | 2017-08-21 10:00 | 6h | 2017-08-18 13:00 | 2017-08-21 10:00 |  |  |  | Quang Hoàng | 6h | 6h | 61.25 | 61.25 | 61.25 |
| 99 | 1.4.1.1.8 | Báo cáo chi tiết huê hồng từng nhân viên, nhập mã nhân viên để in báo cáo chi tiết | 6h | 2017-08-21 10:00 | 2017-08-21 17:00 | 14, 98 |  |  | 2017-08-21 10:00 | 2017-08-21 17:00 | 6h | 2017-08-21 10:00 | 2017-08-21 17:00 | 0.72d | 0d |  | Quang Hoàng | 6h |  | 61.25 | 61.25 |  |
| 100 | 1.4.1.1.9 | Báo cáo tổng hợp huê hồng từng nhân viên, nhập mã nhân viên để in báo cáo tổng hợp | 6h | 2017-08-22 08:00 | 2017-08-22 15:00 | 99, 15 |  |  | 2017-08-22 08:00 | 2017-08-22 15:00 | 6h | 2017-08-22 08:00 | 2017-08-22 15:00 | 0.72d |  |  | Quang Hoàng | 6h |  | 61.25 | 61.25 |  |
| 101 | 1.4.1.1.10 | Báo cáo chi tiết tất cả nhân viên hưởng huê hồng trong tháng | 8h | 2017-08-21 09:00 | 2017-08-22 09:00 | 16, 97 |  |  | 2017-08-21 09:00 | 2017-08-22 09:00 | 8h | 2017-08-21 09:00 | 2017-08-22 09:00 | 0.34d | 0d |  | Thành Luân | 8h |  | 78.75 | 78.75 |  |
| 102 | 1.4.1.1.11 | Báo cáo tổng hợp tất cả nhân viên hưởng huê hồng trong tháng | 8h | 2017-08-22 09:00 | 2017-08-23 09:00 | 101, 17 |  |  | 2017-08-22 09:00 | 2017-08-23 09:00 | 8h | 2017-08-22 09:00 | 2017-08-23 09:00 | 0.34d |  |  | Thành Luân | 8h |  | 78.75 | 78.75 |  |
| 103 | 1.4.2 | **Release 2** | 1.69d | 2017-10-02 15:00 A | 2017-10-04 11:30 A |  | 100% |  | 2017-08-17 08:00 | 2017-08-17 17:00 | 8h? | 2017-10-02 15:00 | 2017-10-04 11:30 |  |  |  |  | 13.5h | 13.5h | 231.88 |  | 231.88 |
| 104 | 1.4.2.1 | **Gộp đối tượng khách hàng** | 0.56d | 2017-10-02 15:00 A | 2017-10-03 10:30 A |  | 100% |  |  |  |  | 2017-10-02 15:00 | 2017-10-03 10:30 |  |  |  |  | 4.5h | 4.5h | 83.12 |  | 83.12 |
| 105 | 1.4.2.1.1 | Danh mục khách hàng | 1h | 2017-10-02 15:00 A | 2017-10-02 16:00 A | 20, 100 | 100% |  |  |  |  | 2017-10-02 15:00 | 2017-10-02 16:00 |  |  | start no earlier than 2017-10-02 15:00 | Quang Hoàng | 1h | 1h | 17.5 |  | 17.5 |
| 106 | 1.4.2.1.2 | Cập nhật khách hàng | 1h | 2017-10-02 16:00 A | 2017-10-02 17:00 A | 105, 21 | 100% |  |  |  |  | 2017-10-02 16:00 | 2017-10-02 17:00 |  |  |  | Quang Hoàng | 1h | 1h | 17.5 |  | 17.5 |
| 107 | 1.4.2.1.3 | Xem chi tiết khách hàng | 1h | 2017-10-03 08:00 A | 2017-10-03 09:00 A | 106, 22, 276 | 100% |  |  |  |  | 2017-10-03 08:00 | 2017-10-03 09:00 |  |  |  | Quang Hoàng | 1h | 1h | 17.5 |  | 17.5 |
| 108 | 1.4.2.1.4 | In lịch sử thông tin khách hàng | 0.5h | 2017-10-03 09:00 A | 2017-10-03 09:30 A | 107, 23 | 100% |  |  |  |  | 2017-10-03 09:00 | 2017-10-03 09:30 |  |  |  | Quang Hoàng | 0.5h | 0.5h | 13.12 |  | 13.12 |
| 109 | 1.4.2.1.5 | Import khách hàng | 1h | 2017-10-03 09:30 A | 2017-10-03 10:30 A | 108, 24 | 100% |  |  |  |  | 2017-10-03 09:30 | 2017-10-03 10:30 |  |  |  | Quang Hoàng | 1h | 1h | 17.5 |  | 17.5 |
| 110 | 1.4.2.2 | **Call center** | 1.12d | 2017-10-03 10:30 A | 2017-10-04 11:30 A |  | 100% |  |  |  |  | 2017-10-03 10:30 | 2017-10-04 11:30 |  |  |  |  | 9h | 9h | 148.75 |  | 148.75 |
| 111 | 1.4.2.2.1 | Hỗ trợ | 0.5h | 2017-10-03 10:30 A | 2017-10-03 11:00 A | 109, 26 | 100% |  |  |  |  | 2017-10-03 10:30 | 2017-10-03 11:00 |  |  |  | Quang Hoàng | 0.5h | 0.5h | 13.12 |  | 13.12 |
| 112 | 1.4.2.2.2 | Gọi đến | 1h | 2017-10-03 11:00 A | 2017-10-03 12:00 A | 111, 27 | 100% |  |  |  |  | 2017-10-03 11:00 | 2017-10-03 12:00 |  |  |  | Quang Hoàng | 1h | 1h | 17.5 |  | 17.5 |
| 113 | 1.4.2.2.3 | Lịch sử cuộc gọi | 0.5h | 2017-10-03 13:00 A | 2017-10-03 13:30 A | 112, 28 | 100% |  |  |  |  | 2017-10-03 13:00 | 2017-10-03 13:30 |  |  |  | Quang Hoàng | 0.5h | 0.5h | 13.12 |  | 13.12 |
| 114 | 1.4.2.2.4 | Công nợ | 1h | 2017-10-03 13:30 A | 2017-10-03 14:30 A | 113, 29 | 100% |  |  |  |  | 2017-10-03 13:30 | 2017-10-03 14:30 |  |  |  | Quang Hoàng | 1h | 1h | 17.5 |  | 17.5 |
| 115 | 1.4.2.2.5 | Thêm nhanh khách hàng | 2h | 2017-10-03 14:30 A | 2017-10-03 16:30 A | 114, 30 | 100% |  |  |  |  | 2017-10-03 14:30 | 2017-10-03 16:30 |  |  |  | Quang Hoàng | 2h | 2h | 26.25 |  | 26.25 |
| 116 | 1.4.2.2.6 | Thêm nhanh đơn hàng | 2h | 2017-10-03 16:30 A | 2017-10-04 09:30 A | 115, 31 | 100% |  |  |  |  | 2017-10-03 16:30 | 2017-10-04 09:30 |  |  |  | Quang Hoàng | 2h | 2h | 26.25 |  | 26.25 |
| 117 | 1.4.2.2.7 | Chọn khách hàng | 1h | 2017-10-04 09:30 A | 2017-10-04 10:30 A | 116, 32 | 100% |  |  |  |  | 2017-10-04 09:30 | 2017-10-04 10:30 |  |  |  | Quang Hoàng | 1h | 1h | 17.5 |  | 17.5 |
| 118 | 1.4.2.2.8 | Xem nhanh công nợ | 1h | 2017-10-04 10:30 A | 2017-10-04 11:30 A | 117, 33 | 100% |  |  |  |  | 2017-10-04 10:30 | 2017-10-04 11:30 |  |  |  | Quang Hoàng | 1h | 1h | 17.5 |  | 17.5 |

Notes:
- 104: Gộp khách hàng bên CRM vào hội viên bên POS
- 110: sửa những chỗ liên quan khách hàng

| ID | WBS | Task | Duration | Start | Finish | Predecessors | Complete | Remaining | Baseline start | Baseline finish | Baseline duration | Baseline 1 start | Baseline 1 finish | Total slack | Free slack | Constraint | Resources | Work | Actual work | Cost | Actual cost |
| --- | --- | --- | --- | --- | --- | --- | --- | --- | --- | --- | --- | --- | --- | --- | --- | --- | --- | --- | --- | --- | --- |
| 119 | 1.4.3 | **Release 3** | 86.59d | 2017-10-04 14:18 A | 2018-02-02 10:00 |  | 71% | 25.06d | 2017-08-17 08:00 | 2017-08-17 17:00 | 8h? | 2017-09-21 14:00 | 2017-10-18 13:12 | 0d |  |  |  | 141h | 96h | 1,513.75 | 1,032.5 |
| 120 | 1.4.3.1 | **Quản lý công việc** | 86.59d | 2017-10-04 14:18 A | 2018-02-02 10:00 |  | 71% | 25.06d |  |  |  | 2017-09-21 14:00 | 2017-10-18 13:12 | 0d |  |  |  | 141h | 96h | 1,513.75 | 1,032.5 |
| 121 | 1.4.3.1.1 | Danh mục thiết lập thời gian làm việc | 1h | 2017-12-27 14:00 | 2017-12-27 15:00 | 278, 37 |  |  |  |  |  | 2017-09-21 14:00 | 2017-09-21 15:00 | -81.62d | 0d | start no earlier than 2017-12-27 14:00 | Thành Luân | 1h |  | 17.5 |  |
| 122 | 1.4.3.1.2 | Xem chi tiết thời gian làm việc | 2h | 2017-12-27 15:00 | 2017-12-27 17:00 | 121, 38 |  |  |  |  |  | 2017-09-22 08:00 | 2017-09-22 10:00 | -81.62d | 0d |  | Thành Luân | 2h |  | 26.25 |  |
| 123 | 1.4.3.1.3 | Thiết lập thời gian làm việc | 4h | 2017-12-28 08:00 | 2017-12-28 12:00 | 122, 39 |  |  |  |  |  | 2017-09-22 10:00 | 2017-09-22 15:00 | -81.62d | 0d |  | Thành Luân | 4h |  | 43.75 |  |
| 124 | 1.4.3.1.4 | Thiết lập hệ thống | 8h | 2017-12-14 10:00 | 2017-12-15 10:00 | 36 |  |  |  |  |  | 2017-09-22 15:00 | 2017-09-25 15:00 | -80.25d | 0d | start no earlier than 2017-12-14 10:00 | Thanh Lam | 8h |  | 78.75 |  |
| 125 | 1.4.3.1.5 | Sửa giao diện menu tổng | 8h | 2017-10-04 14:18 A | 2017-10-05 14:18 A | 294 | 100% |  |  |  |  | 2017-10-04 14:18 | 2017-10-05 14:18 |  |  |  | Quang Hoàng | 8h | 8h | 78.75 | 78.75 |
| 126 | 1.4.3.1.6 | Điều kiện tìm kiếm động ở các màn hình tìm kiếm | 14h | 2017-10-05 14:18 A | 2017-10-09 11:18 A | 125 | 100% |  |  |  |  | 2017-10-05 14:18 | 2017-10-09 11:18 |  |  |  | Quang Hoàng | 14h | 14h | 131.25 | 131.25 |
| 127 | 1.4.3.1.7 | Group dữ liệu theo ý người dùng khi hiển thị dạng list | 8h | 2018-01-01 13:00 | 2018-01-02 12:00 | 126, 175 |  |  |  |  |  | 2017-10-09 11:18 | 2017-10-10 11:18 | -87.62d | 0d |  | Quang Hoàng | 8h |  | 78.75 |  |
| 128 | 1.4.3.1.8 | Thông báo | 5h | 2018-01-02 13:00 | 2018-01-03 09:00 | 127, 40 |  |  |  |  |  | 2017-10-10 11:18 | 2017-10-11 08:18 | -87.62d | 0d |  | Quang Hoàng | 5h |  | 52.5 |  |
| 129 | 1.4.3.1.9 | Danh mục thông báo | 4h | 2017-12-15 10:00 A | 2017-12-15 15:00 A | 41, 124 | 100% |  |  |  |  | 2017-09-25 15:00 | 2017-09-25 16:00 |  |  |  | Thanh Lam | 4h | 4h | 43.75 | 43.75 |
| 130 | 1.4.3.1.10 | Cập nhật thông báo | 6h | 2017-12-15 15:00 A | 2017-12-18 12:00 A | 129, 42 | 100% |  |  |  |  | 2017-09-25 16:00 | 2017-09-26 09:00 |  |  |  | Thanh Lam | 6h | 6h | 61.25 | 61.25 |
| 131 | 1.4.3.1.11 | Xem thông báo | 4h | 2017-12-18 13:00 A | 2017-12-18 17:00 A | 130, 43 | 100% |  |  |  |  | 2017-09-26 09:00 | 2017-09-26 10:00 |  |  |  | Thanh Lam | 4h | 4h | 43.75 | 43.75 |
| 132 | 1.4.3.1.12 | Danh mục quy trình | 4h | 2017-12-19 13:00 A | 2017-12-19 17:00 A | 44, 131 | 100% |  |  |  |  | 2017-10-06 08:12 | 2017-10-06 09:12 |  |  |  | Thanh Lam | 4h | 4h | 43.75 | 43.75 |
| 133 | 1.4.3.1.13 | Xem chi tiết quy trình | 6h | 2017-12-20 08:00 A | 2017-12-21 10:00 A | 132, 45 | 100% |  |  |  |  | 2017-10-06 11:12 | 2017-10-06 14:12 |  |  |  | Thanh Lam | 6h | 6h | 61.25 | 61.25 |
| 134 | 1.4.3.1.14 | Cập nhật quy trình | 4h | 2017-12-21 10:00 A | 2017-12-21 15:00 A | 133, 46 | 100% |  |  |  |  | 2017-10-06 15:12 | 2017-10-06 16:12 |  |  |  | Thanh Lam | 4h | 4h | 43.75 | 43.75 |
| 135 | 1.4.3.1.15 | Danh mục bước | 4h | 2017-12-21 15:00 A | 2017-12-22 10:00 A | 134, 47 | 100% |  |  |  |  | 2017-10-09 09:12 | 2017-10-09 10:12 |  |  |  | Thanh Lam | 4h | 4h | 43.75 | 43.75 |
| 136 | 1.4.3.1.16 | Xem chi tiết bước | 6h | 2017-12-22 10:00 A | 2017-12-22 17:00 A | 135, 48 | 100% |  |  |  |  | 2017-10-09 13:12 | 2017-10-09 15:12 |  |  |  | Thanh Lam | 6h | 6h | 61.25 | 61.25 |
| 137 | 1.4.3.1.17 | Cập nhật bước | 4h | 2017-12-25 08:00 A | 2017-12-25 12:00 A | 136, 49 | 100% |  |  |  |  | 2017-10-09 16:12 | 2017-10-10 08:12 |  |  |  | Thanh Lam | 4h | 4h | 43.75 | 43.75 |
| 138 | 1.4.3.1.18 | Cập nhật mẫu công việc theo bước | 5h | 2017-12-25 13:00 A | 2017-12-26 14:00 A | 137, 50 | 100% |  |  |  |  | 2017-10-10 11:12 | 2017-10-10 15:12 |  |  |  | Thanh Lam | 5h | 5h | 52.5 | 52.5 |
| 139 | 1.4.3.1.19 | Danh mục trạng thái | 4h | 2017-12-26 14:00 A | 2017-12-27 09:00 A | 138, 51 | 100% |  |  |  |  | 2017-10-10 15:12 | 2017-10-10 16:12 |  |  |  | Thanh Lam | 4h | 4h | 43.75 | 43.75 |
| 140 | 1.4.3.1.20 | Xem chi tiết trạng thái | 6h | 2017-12-27 09:00 A | 2017-12-28 11:00 A | 139, 52 | 100% |  |  |  |  | 2017-10-11 09:12 | 2017-10-11 11:12 |  |  |  | Thanh Lam | 6h | 6h | 61.25 | 61.25 |
| 141 | 1.4.3.1.21 | Cập nhật trạng thái | 4h | 2017-12-28 11:00 A | 2017-12-28 16:00 A | 140, 53 | 100% |  |  |  |  | 2017-10-11 11:12 | 2017-10-11 13:12 |  |  |  | Thanh Lam | 4h | 4h | 43.75 | 43.75 |
| 142 | 1.4.3.1.22 | Danh sách mẫu dự án/nhóm công việc | 1h | 2018-01-16 13:00 A | 2018-01-16 14:00 A | 54 | 100% |  |  |  |  | 2017-10-11 15:12 | 2017-10-11 16:12 |  |  | start no earlier than 2018-01-16 08:00 | Thanh Lam | 1h | 1h | 17.5 | 17.5 |
| 143 | 1.4.3.1.23 | Xem chi tiết mẫu dự án/nhóm công việc | 2h | 2018-01-16 14:00 A | 2018-01-16 16:00 | 142, 55 | 90% | 0.2h |  |  |  | 2017-10-12 09:12 | 2017-10-12 11:12 | -92.75d | 0d |  | Thanh Lam | 2h |  | 26.25 |  |
| 144 | 1.4.3.1.24 | Cập nhật mẫu dự án/nhóm công việc | 1h | 2018-01-16 16:00 A | 2018-01-16 17:00 A | 143, 56 | 100% |  |  |  |  | 2017-10-12 13:12 | 2017-10-12 14:12 |  |  |  | Thanh Lam | 1h | 1h | 17.5 | 17.5 |
| 145 | 1.4.3.1.25 | Danh sách dự án/nhóm công việc (Dạng List) | 1h | 2018-01-31 08:00 A | 2018-01-31 09:00 A | 144, 57 | 100% |  |  |  |  | 2017-10-13 08:12 | 2017-10-13 09:12 |  |  | start no earlier than 2018-01-31 08:00 | Thanh Lam | 1h | 1h | 17.5 | 17.5 |
| 146 | 1.4.3.1.26 | Danh sách dự án/nhóm công việc (Dạng Kanban) | 6h | 2018-01-03 09:00 | 2018-01-03 16:00 | 128, 58 |  |  |  |  |  | 2017-10-13 14:12 | 2017-10-16 11:12 | -87.62d | 0d |  | Quang Hoàng | 6h |  | 61.25 |  |
| 147 | 1.4.3.1.27 | Danh sách dự án/nhóm công việc (Dạng Gantt) | 6h | 2018-01-03 16:00 | 2018-01-04 14:00 | 146, 59 |  |  |  |  |  | 2017-10-16 11:12 | 2017-10-17 09:12 | -87.62d | 0d |  | Quang Hoàng | 6h |  | 61.25 |  |
| 148 | 1.4.3.1.28 | Cập nhật dự án/nhóm công việc | 4h | 2018-01-31 09:00 A | 2018-02-01 09:00 A | 145, 60 | 100% |  |  |  |  | 2017-10-16 14:12 | 2017-10-17 09:12 |  |  |  | Thanh Lam | 4h | 4h | 43.75 | 43.75 |
| 149 | 1.4.3.1.29 | Xem dự án/nhóm công việc | 3h | 2018-02-01 09:00 A | 2018-02-01 12:00 | 148, 61 | 80% | 0.6h |  |  |  | 2017-10-17 09:12 | 2017-10-17 13:12 | -104.38d | 0d |  | Thanh Lam | 3h |  | 35 |  |
| 150 | 1.4.3.1.30 | Chọn hợp đồng | 2h | 2018-02-01 13:00 A | 2018-02-01 15:00 A | 149, 62 | 100% |  |  |  |  | 2017-10-17 13:12 | 2017-10-17 15:12 |  |  |  | Thanh Lam | 2h | 2h | 26.25 | 26.25 |
| 151 | 1.4.3.1.31 | Chọn nhân sự | 2h | 2018-02-01 15:00 A | 2018-02-01 17:00 A | 150, 63 | 100% |  |  |  |  | 2017-10-17 16:12 | 2017-10-18 09:12 |  |  |  | Thanh Lam | 2h | 2h | 26.25 | 26.25 |
| 152 | 1.4.3.1.32 | Chọn phòng ban | 2h | 2018-02-02 08:00 A | 2018-02-02 10:00 A | 151, 64 | 100% |  |  |  |  | 2017-10-18 10:12 | 2017-10-18 13:12 |  |  |  | Thanh Lam | 2h | 2h | 26.25 | 26.25 |

Notes:
- 138: Mŕn hěnh nŕy đă gộp chung với mŕn hěnh Cập nhật bước thŕnh 1 mŕn hěnh

| ID | WBS | Task | Type | Duration | Start | Finish | Predecessors | Baseline start | Baseline finish | Baseline duration | Baseline 1 start | Baseline 1 finish | Total slack | Free slack | Constraint | Resources | Work | Cost |
| --- | --- | --- | --- | --- | --- | --- | --- | --- | --- | --- | --- | --- | --- | --- | --- | --- | --- | --- |
| 153 | 1.4.4 | **Release 4** |  | 13.38d | 2017-12-21 11:00 | 2018-01-09 15:00 |  |  |  |  | 2017-10-11 11:00 | 2017-10-27 12:00 | -87.62d | 0d |  |  | 82h | 901.25 |
| 154 | 1.4.4.1 | **Quản lý công việc** |  | 13.38d | 2017-12-21 11:00 | 2018-01-09 15:00 |  |  |  |  | 2017-10-11 11:00 | 2017-10-27 12:00 | -87.62d | 0d |  |  | 82h | 901.25 |
| 155 | 1.4.4.1.1 | Danh sách công việc (Dạng List) |  | 1h | 2017-12-21 11:00 | 2017-12-21 12:00 | 67 |  |  |  | 2017-10-11 11:00 | 2017-10-11 12:00 | -87.62d | 0d | start no earlier than 2017-12-21 11:00 | Quang Hoàng | 1h | 17.5 |
| 156 | 1.4.4.1.2 | Danh sách công việc (Dạng Kanban) |  | 4h | 2018-01-04 14:00 | 2018-01-05 09:00 | 68, 147 |  |  |  | 2017-10-12 08:00 | 2017-10-12 12:00 | -87.62d | 0d |  | Quang Hoàng | 4h | 43.75 |
| 157 | 1.4.4.1.3 | Danh sách công việc (Dạng Lịch) |  | 2h | 2018-01-05 09:00 | 2018-01-05 11:00 | 156, 69 |  |  |  | 2017-10-12 13:00 | 2017-10-12 15:00 | -87.62d | 0d |  | Quang Hoàng | 2h | 26.25 |
| 158 | 1.4.4.1.4 | Danh sách công việc (Dạng Gantt) |  | 4h | 2018-01-05 11:00 | 2018-01-05 16:00 | 157, 70 |  |  |  | 2017-10-12 16:00 | 2017-10-13 11:00 | -87.62d | 0d |  | Quang Hoàng | 4h | 43.75 |
| 159 | 1.4.4.1.5 | Import công việc |  | 8h | 2017-12-21 13:00 | 2017-12-22 12:00 | 71, 155 |  |  |  | 2017-10-13 16:00 | 2017-10-16 16:00 | -87.62d | 0d |  | Quang Hoàng | 8h | 78.75 |
| 160 | 1.4.4.1.6 | Cập nhật công việc |  | 4h | 2017-12-22 13:00 | 2017-12-22 17:00 | 72, 159 |  |  |  | 2017-10-16 16:00 | 2017-10-17 11:00 | -87.62d | 0d |  | Quang Hoàng | 4h | 43.75 |
| 161 | 1.4.4.1.7 | Xem thông tin công việc |  | 3h | 2017-12-25 08:00 | 2017-12-25 11:00 | 73, 160 |  |  |  | 2017-10-17 11:00 | 2017-10-17 15:00 | -87.62d | 0d |  | Quang Hoàng | 3h | 35 |
| 162 | 1.4.4.1.8 | Chọn công việc trước |  | 3h | 2017-12-25 11:00 | 2017-12-25 15:00 | 74, 161 |  |  |  | 2017-10-17 15:00 | 2017-10-18 09:00 | -87.62d | 0d |  | Quang Hoàng | 3h | 35 |
| 163 | 1.4.4.1.9 | Nhập checklist công việc |  | 2h | 2017-12-25 15:00 | 2017-12-25 17:00 | 75, 162 |  |  |  | 2017-10-18 09:00 | 2017-10-18 11:00 | -87.62d | 0d |  | Quang Hoàng | 2h | 26.25 |
| 164 | 1.4.4.1.10 | Cập nhật công việc hàng loạt |  | 3h | 2017-12-26 08:00 | 2017-12-26 11:00 | 76, 163 |  |  |  | 2017-10-18 11:00 | 2017-10-18 15:00 | -87.62d | 0d |  | Quang Hoàng | 3h | 35 |
| 165 | 1.4.4.1.11 | Thiết kế Dasboard chung |  | 8h | 2018-01-08 15:00 | 2018-01-09 15:00 | 77, 168 |  |  |  | 2017-10-19 09:00 | 2017-10-20 09:00 | -87.62d | 0d |  | Quang Hoàng | 8h | 78.75 |
| 166 | 1.4.4.1.12 | Thiết lập thời gian lặp lại |  | 4h | 2017-12-26 11:00 | 2017-12-26 16:00 | 78, 164 |  |  |  | 2017-10-20 09:00 | 2017-10-20 14:00 | -87.62d | 0d |  | Quang Hoàng | 4h | 43.75 |
| 167 | 1.4.4.1.13 | Màn hình calendar hiển thị theo dạng lịch |  | 4h | 2018-01-05 16:00 | 2018-01-08 11:00 | 79, 158 |  |  |  | 2017-10-20 14:00 | 2017-10-23 09:00 | -87.62d | 0d |  | Quang Hoàng | 4h | 43.75 |
| 168 | 1.4.4.1.14 | Màn hình calendar hiển thị theo dạng list |  | 3h | 2018-01-08 11:00 | 2018-01-08 15:00 | 80, 167 |  |  |  | 2017-10-23 09:00 | 2017-10-23 12:00 | -87.62d | 0d |  | Quang Hoàng | 3h | 35 |
| 169 | 1.4.4.1.15 | Lập lịch |  | 6h | 2017-12-26 16:00 | 2017-12-27 14:00 | 81, 166 |  |  |  | 2017-10-23 13:00 | 2017-10-24 10:00 | -87.62d | 0d |  | Quang Hoàng | 6h | 61.25 |
| 170 | 1.4.4.1.16 | Gửi mail (cho Nhân sự tham gia) -> gửi mail nội bộ |  | 2h | 2017-12-27 14:00 | 2017-12-27 16:00 | 82, 169 |  |  |  | 2017-10-24 10:00 | 2017-10-24 12:00 | -87.62d | 0d |  | Quang Hoàng | 2h | 26.25 |
| 171 | 1.4.4.1.17 | Thiết lập gửi mail |  | 2h | 2017-12-27 16:00 | 2017-12-28 09:00 | 83, 170 |  |  |  | 2017-10-24 13:00 | 2017-10-24 15:00 | -87.62d | 0d |  | Quang Hoàng | 2h | 26.25 |
| 172 | 1.4.4.1.18 | Thiết lập cảnh báo |  | 2h | 2017-12-28 09:00 | 2017-12-28 11:00 | 84, 171 |  |  |  | 2017-10-24 16:00 | 2017-10-25 09:00 | -87.62d | 0d |  | Quang Hoàng | 2h | 26.25 |
| 173 | 1.4.4.1.19 | Focus sheet |  | 5h | 2017-12-28 11:00 | 2017-12-28 17:00 | 85, 172 |  |  |  | 2017-10-25 11:00 | 2017-10-25 17:00 | -87.62d | 0d |  | Quang Hoàng | 5h | 52.5 |
| 174 | 1.4.4.1.20 | Báo cáo công việc theo dự án |  | 6h | 2017-12-29 08:00 | 2017-12-29 15:00 | 86, 173 |  |  |  | 2017-10-26 08:00 | 2017-10-26 15:00 | -87.62d | 0d |  | Quang Hoàng | 6h | 61.25 |
| 175 | 1.4.4.1.21 | Báo cáo công việc theo nhân viên |  | 6h | 2017-12-29 15:00 | 2018-01-01 12:00 | 87, 174 |  |  |  | 2017-10-26 15:00 | 2017-10-27 12:00 | -87.62d | 0d |  | Quang Hoàng | 6h | 61.25 |
| 176 | 1.5 | Development Completed | milestone | 0d | 2017-08-17 08:00 | 2017-08-17 08:00 |  | 2017-08-17 08:00 | 2017-08-17 08:00 | 0d | 2017-08-17 08:00 | 2017-08-17 08:00 | 21d |  |  |  |  |  |

| ID | WBS | Task | Duration | Start | Finish | Predecessors | Baseline start | Baseline finish | Baseline duration | Baseline 1 start | Baseline 1 finish | Total slack | Free slack | Resources | Work | Cost | Baseline cost |
| --- | --- | --- | --- | --- | --- | --- | --- | --- | --- | --- | --- | --- | --- | --- | --- | --- | --- |
| 177 | 1.6 | **Test** | 120.88d | 2017-08-23 09:00 | 2018-02-08 17:00 |  | 2017-08-18 08:00 | 2017-08-23 14:45 | 3.72d? | 2017-08-23 09:00 | 2017-11-02 17:00 | -104d | 0d |  | 90.7h | 1,467.38 | 157.5 |
| 178 | 1.6.1 | **Release 1** | 0.59d | 2017-08-23 09:00 | 2017-08-23 14:45 | 90 | 2017-08-23 09:00 | 2017-08-23 14:45 | 0.59d | 2017-08-23 09:00 | 2017-08-23 14:45 | 16.28d |  |  | 7h | 157.5 | 157.5 |
| 179 | 1.6.1.1 | **Quản lý hoa hồng** | 0.59d | 2017-08-23 09:00 | 2017-08-23 14:45 |  | 2017-08-23 09:00 | 2017-08-23 14:45 | 0.59d | 2017-08-23 09:00 | 2017-08-23 14:45 | 16.28d |  |  | 7h | 157.5 | 157.5 |
| 180 | 1.6.1.1.1 | Cập nhật cửa hàng | 0.5h | 2017-08-23 09:00 | 2017-08-23 09:30 |  | 2017-08-23 09:00 | 2017-08-23 09:30 | 0.5h | 2017-08-23 09:00 | 2017-08-23 09:30 | 16.28d | 0d | Thị Phượng | 0.5h | 13.12 | 13.12 |
| 181 | 1.6.1.1.2 | Thiết lập thông tin công ty | 0.25h | 2017-08-23 09:30 | 2017-08-23 09:45 | 180 | 2017-08-23 09:30 | 2017-08-23 09:45 | 0.25h | 2017-08-23 09:30 | 2017-08-23 09:45 | 16.28d | 0d | Thị Phượng | 0.25h | 10.94 | 10.94 |
| 182 | 1.6.1.1.3 | Danh mục mức hoa hồng theo doanh thu lũy kế | 0.75h | 2017-08-23 09:45 | 2017-08-23 10:30 | 181 | 2017-08-23 09:45 | 2017-08-23 10:30 | 0.75h | 2017-08-23 09:45 | 2017-08-23 10:30 | 16.28d | 0d | Thị Phượng | 0.75h | 15.31 | 15.31 |
| 183 | 1.6.1.1.4 | Cập nhật mức hoa hồng theo doanh thu lũy kế | 0.75h | 2017-08-23 10:30 | 2017-08-23 11:15 | 182 | 2017-08-23 10:30 | 2017-08-23 11:15 | 0.75h | 2017-08-23 10:30 | 2017-08-23 11:15 | 16.28d | 0d | Thị Phượng | 0.75h | 15.31 | 15.31 |
| 184 | 1.6.1.1.5 | Xem chi tiết mức hoa hồng theo doanh thu lũy kế | 0.75h | 2017-08-23 11:15 | 2017-08-23 12:00 | 183 | 2017-08-23 11:15 | 2017-08-23 12:00 | 0.75h | 2017-08-23 11:15 | 2017-08-23 12:00 | 16.28d | 0d | Thị Phượng | 0.75h | 15.31 | 15.31 |
| 185 | 1.6.1.1.6 | Cập nhật hội viên | 0.25h | 2017-08-23 13:00 | 2017-08-23 13:15 | 184 | 2017-08-23 13:00 | 2017-08-23 13:15 | 0.25h | 2017-08-23 13:00 | 2017-08-23 13:15 | 16.28d | 0d | Thị Phượng | 0.25h | 10.94 | 10.94 |
| 186 | 1.6.1.1.7 | Sơ đồ cây nhân viên hưởng hoa hồng | 0.75h | 2017-08-23 09:00 | 2017-08-23 09:45 |  | 2017-08-23 09:00 | 2017-08-23 09:45 | 0.75h | 2017-08-23 09:00 | 2017-08-23 09:45 | 16.59d | 0d | Hoàng Vũ | 0.75h | 15.31 | 15.31 |
| 187 | 1.6.1.1.8 | Báo cáo chi tiết huê hồng từng nhân viên, nhập mã nhân viên để in báo cáo chi tiết | 0.75h | 2017-08-23 13:15 | 2017-08-23 14:00 | 185 | 2017-08-23 13:15 | 2017-08-23 14:00 | 0.75h | 2017-08-23 13:15 | 2017-08-23 14:00 | 16.28d | 0d | Thị Phượng | 0.75h | 15.31 | 15.31 |
| 188 | 1.6.1.1.9 | Báo cáo tổng hợp huê hồng từng nhân viên, nhập mã nhân viên để in báo cáo tổng hợp | 0.75h | 2017-08-23 14:00 | 2017-08-23 14:45 | 187 | 2017-08-23 14:00 | 2017-08-23 14:45 | 0.75h | 2017-08-23 14:00 | 2017-08-23 14:45 | 16.28d |  | Thị Phượng | 0.75h | 15.31 | 15.31 |
| 189 | 1.6.1.1.10 | Báo cáo chi tiết tất cả nhân viên hưởng huê hồng trong tháng | 0.75h | 2017-08-23 09:45 | 2017-08-23 10:30 | 186 | 2017-08-23 09:45 | 2017-08-23 10:30 | 0.75h | 2017-08-23 09:45 | 2017-08-23 10:30 | 16.59d | 0d | Hoàng Vũ | 0.75h | 15.31 | 15.31 |
| 190 | 1.6.1.1.11 | Báo cáo tổng hợp tất cả nhân viên hưởng huê hồng trong tháng | 0.75h | 2017-08-23 10:30 | 2017-08-23 11:15 | 189 | 2017-08-23 10:30 | 2017-08-23 11:15 | 0.75h | 2017-08-23 10:30 | 2017-08-23 11:15 | 16.59d |  | Hoàng Vũ | 0.75h | 15.31 | 15.31 |
| 191 | 1.6.2 | **Release 2** | 1.21d | 2017-10-04 11:30 | 2017-10-05 14:12 | 103 | 2017-08-18 08:00 | 2017-08-18 17:00 | 8h? | 2017-10-04 11:30 | 2017-10-05 14:12 | -13.65d | 0d |  | 9.7h | 198.62 |  |
| 192 | 1.6.2.1 | **Gộp đối tượng khách hàng** | 0.12d | 2017-10-04 11:30 | 2017-10-04 13:30 |  |  |  |  | 2017-10-04 11:30 | 2017-10-04 13:30 | -13.65d | 0d |  | 1h | 52.5 |  |
| 193 | 1.6.2.1.1 | Danh mục khách hàng | 0.2h | 2017-10-04 11:30 | 2017-10-04 11:42 |  |  |  |  | 2017-10-04 11:30 | 2017-10-04 11:42 | -13.65d | 0d | Thị Phượng | 0.2h | 10.5 |  |
| 194 | 1.6.2.1.2 | Cập nhật khách hàng | 0.2h | 2017-10-04 11:42 | 2017-10-04 11:54 | 193 |  |  |  | 2017-10-04 11:42 | 2017-10-04 11:54 | -13.65d | 0d | Thị Phượng | 0.2h | 10.5 |  |
| 195 | 1.6.2.1.3 | Xem chi tiết khách hàng | 0.2h | 2017-10-04 11:54 | 2017-10-04 13:06 | 194 |  |  |  | 2017-10-04 11:54 | 2017-10-04 13:06 | -13.65d | 0d | Thị Phượng | 0.2h | 10.5 |  |
| 196 | 1.6.2.1.4 | In lịch sử thông tin khách hàng | 0.2h | 2017-10-04 13:06 | 2017-10-04 13:18 | 195 |  |  |  | 2017-10-04 13:06 | 2017-10-04 13:18 | -13.65d | 0d | Thị Phượng | 0.2h | 10.5 |  |
| 197 | 1.6.2.1.5 | Import khách hàng | 0.2h | 2017-10-04 13:18 | 2017-10-04 13:30 | 196 |  |  |  | 2017-10-04 13:18 | 2017-10-04 13:30 | -13.65d | 0d | Thị Phượng | 0.2h | 10.5 |  |
| 198 | 1.6.2.2 | **Call center** | 1.09d | 2017-10-04 13:30 | 2017-10-05 14:12 |  |  |  |  | 2017-10-04 13:30 | 2017-10-05 14:12 | -13.65d | 0d |  | 8.7h | 146.12 |  |
| 199 | 1.6.2.2.1 | Hỗ trợ | 0.1h | 2017-10-04 13:30 | 2017-10-04 13:36 | 197 |  |  |  | 2017-10-04 13:30 | 2017-10-04 13:36 | -13.65d | 0d | Thị Phượng | 0.1h | 9.62 |  |
| 200 | 1.6.2.2.2 | Gọi đến | 0.1h | 2017-10-04 13:36 | 2017-10-04 13:42 | 199 |  |  |  | 2017-10-04 13:36 | 2017-10-04 13:42 | -13.65d | 0d | Thị Phượng | 0.1h | 9.62 |  |
| 201 | 1.6.2.2.3 | Lịch sử cuộc gọi | 0.1h | 2017-10-04 13:42 | 2017-10-04 13:48 | 200 |  |  |  | 2017-10-04 13:42 | 2017-10-04 13:48 | -13.65d | 0d | Thị Phượng | 0.1h | 9.62 |  |
| 202 | 1.6.2.2.4 | Công nợ | 0.1h | 2017-10-04 13:48 | 2017-10-04 13:54 | 201 |  |  |  | 2017-10-04 13:48 | 2017-10-04 13:54 | -13.65d | 0d | Thị Phượng | 0.1h | 9.62 |  |
| 203 | 1.6.2.2.5 | Thêm nhanh khách hàng | 0.1h | 2017-10-04 13:54 | 2017-10-04 14:00 | 202 |  |  |  | 2017-10-04 13:54 | 2017-10-04 14:00 | -13.65d | 0d | Thị Phượng | 0.1h | 9.62 |  |
| 204 | 1.6.2.2.6 | Thêm nhanh đơn hàng | 0.1h | 2017-10-04 14:00 | 2017-10-04 14:06 | 203 |  |  |  | 2017-10-04 14:00 | 2017-10-04 14:06 | -13.65d | 0d | Thị Phượng | 0.1h | 9.62 |  |
| 205 | 1.6.2.2.7 | Chọn khách hàng | 0.1h | 2017-10-04 14:06 | 2017-10-04 14:12 | 204 |  |  |  | 2017-10-04 14:06 | 2017-10-04 14:12 | -13.65d | 0d | Thị Phượng | 0.1h | 9.62 |  |
| 206 | 1.6.2.2.8 | Xem nhanh công nợ | 8h | 2017-10-04 14:12 | 2017-10-05 14:12 | 205 |  |  |  | 2017-10-04 14:12 | 2017-10-05 14:12 | -13.65d | 0d | Thị Phượng | 8h | 78.75 |  |

Notes:
- 192: Gộp khách hàng bên CRM vào hội viên bên POS
- 198: sửa những chỗ liên quan khách hàng

| ID | WBS | Task | Duration | Start | Finish | Predecessors | Baseline start | Baseline finish | Baseline duration | Baseline 1 start | Baseline 1 finish | Total slack | Free slack | Resources | Work | Cost |
| --- | --- | --- | --- | --- | --- | --- | --- | --- | --- | --- | --- | --- | --- | --- | --- | --- |
| 207 | 1.6.3 | **Release 3** | 4.75d | 2018-02-02 10:00 | 2018-02-08 17:00 | 119 | 2017-08-17 08:00 | 2017-08-17 17:00 | 8h? | 2017-10-18 13:12 | 2017-10-25 10:12 | -104d | 0d |  | 38h | 612.5 |
| 208 | 1.6.3.1 | **Quản lý công việc** | 4.75d | 2018-02-02 10:00 | 2018-02-08 17:00 |  |  |  |  | 2017-10-18 13:12 | 2017-10-25 10:12 | -104d | 0d |  | 38h | 612.5 |
| 209 | 1.6.3.1.1 | Thiết lập hệ thống | 1h | 2018-02-02 10:00 | 2018-02-02 11:00 |  |  |  |  | 2017-10-18 13:12 | 2017-10-18 14:12 | -104d | 0d | Thị Phượng | 1h | 17.5 |
| 210 | 1.6.3.1.2 | Danh mục thiết lập thời gian làm việc | 1h | 2018-02-02 11:00 | 2018-02-02 12:00 | 209 |  |  |  | 2017-10-18 14:12 | 2017-10-18 15:12 | -104d | 0d | Thị Phượng | 1h | 17.5 |
| 211 | 1.6.3.1.3 | Xem chi tiết thời gian làm việc | 1h | 2018-02-02 13:00 | 2018-02-02 14:00 | 210 |  |  |  | 2017-10-18 15:12 | 2017-10-18 16:12 | -104d | 0d | Thị Phượng | 1h | 17.5 |
| 212 | 1.6.3.1.4 | Thiết lập thời gian làm việc | 1h | 2018-02-02 14:00 | 2018-02-02 15:00 | 211 |  |  |  | 2017-10-18 16:12 | 2017-10-19 08:12 | -104d | 0d | Thị Phượng | 1h | 17.5 |
| 213 | 1.6.3.1.5 | Sửa giao diện menu tổng | 1h | 2018-02-02 15:00 | 2018-02-02 16:00 | 212 |  |  |  | 2017-10-19 08:12 | 2017-10-19 09:12 | -104d | 0d | Thị Phượng | 1h | 17.5 |
| 214 | 1.6.3.1.6 | Điều kiện tìm kiếm động ở các màn hình tìm kiếm | 2h | 2018-02-02 16:00 | 2018-02-05 09:00 | 213 |  |  |  | 2017-10-19 09:12 | 2017-10-19 11:12 | -104d | 0d | Thị Phượng | 2h | 26.25 |
| 215 | 1.6.3.1.7 | Group dữ liệu theo ý người dùng khi hiển thị dạng list | 2h | 2018-02-05 09:00 | 2018-02-05 11:00 | 214 |  |  |  | 2017-10-19 11:12 | 2017-10-19 14:12 | -104d | 0d | Thị Phượng | 2h | 26.25 |
| 216 | 1.6.3.1.8 | Thông báo | 2h | 2018-02-05 11:00 | 2018-02-05 14:00 | 215 |  |  |  | 2017-10-19 14:12 | 2017-10-19 16:12 | -104d | 0d | Thị Phượng | 2h | 26.25 |
| 217 | 1.6.3.1.9 | Danh mục thông báo | 1h | 2018-02-05 14:00 | 2018-02-05 15:00 | 216 |  |  |  | 2017-10-19 16:12 | 2017-10-20 08:12 | -104d | 0d | Thị Phượng | 1h | 17.5 |
| 218 | 1.6.3.1.10 | Cập nhật thông báo | 1h | 2018-02-05 15:00 | 2018-02-05 16:00 | 217 |  |  |  | 2017-10-20 08:12 | 2017-10-20 09:12 | -104d | 0d | Thị Phượng | 1h | 17.5 |
| 219 | 1.6.3.1.11 | Xem thông báo | 1h | 2018-02-05 16:00 | 2018-02-05 17:00 | 218 |  |  |  | 2017-10-20 09:12 | 2017-10-20 10:12 | -104d | 0d | Thị Phượng | 1h | 17.5 |
| 220 | 1.6.3.1.12 | Danh mục quy trình | 1h | 2018-02-06 08:00 | 2018-02-06 09:00 | 219 |  |  |  | 2017-10-20 10:12 | 2017-10-20 11:12 | -104d | 0d | Thị Phượng | 1h | 17.5 |
| 221 | 1.6.3.1.13 | Xem chi tiết quy trình | 1h | 2018-02-06 09:00 | 2018-02-06 10:00 | 220 |  |  |  | 2017-10-20 11:12 | 2017-10-20 13:12 | -104d | 0d | Thị Phượng | 1h | 17.5 |
| 222 | 1.6.3.1.14 | Cập nhật quy trình | 1h | 2018-02-06 10:00 | 2018-02-06 11:00 | 221 |  |  |  | 2017-10-20 13:12 | 2017-10-20 14:12 | -104d | 0d | Thị Phượng | 1h | 17.5 |
| 223 | 1.6.3.1.15 | Danh mục bước | 1h | 2018-02-06 11:00 | 2018-02-06 12:00 | 222 |  |  |  | 2017-10-20 14:12 | 2017-10-20 15:12 | -104d | 0d | Thị Phượng | 1h | 17.5 |
| 224 | 1.6.3.1.16 | Xem chi tiết bước | 1h | 2018-02-06 13:00 | 2018-02-06 14:00 | 223 |  |  |  | 2017-10-20 15:12 | 2017-10-20 16:12 | -104d | 0d | Thị Phượng | 1h | 17.5 |
| 225 | 1.6.3.1.17 | Cập nhật bước | 1h | 2018-02-06 14:00 | 2018-02-06 15:00 | 224 |  |  |  | 2017-10-20 16:12 | 2017-10-23 08:12 | -104d | 0d | Thị Phượng | 1h | 17.5 |
| 226 | 1.6.3.1.18 | Cập nhật mẫu công việc theo bước | 1h | 2018-02-06 15:00 | 2018-02-06 16:00 | 225 |  |  |  | 2017-10-23 08:12 | 2017-10-23 09:12 | -104d | 0d | Thị Phượng | 1h | 17.5 |
| 227 | 1.6.3.1.19 | Danh mục trạng thái | 1h | 2018-02-06 16:00 | 2018-02-06 17:00 | 226 |  |  |  | 2017-10-23 09:12 | 2017-10-23 10:12 | -104d | 0d | Thị Phượng | 1h | 17.5 |
| 228 | 1.6.3.1.20 | Xem chi tiết trạng thái | 1h | 2018-02-07 08:00 | 2018-02-07 09:00 | 227 |  |  |  | 2017-10-23 10:12 | 2017-10-23 11:12 | -104d | 0d | Thị Phượng | 1h | 17.5 |
| 229 | 1.6.3.1.21 | Cập nhật trạng thái | 1h | 2018-02-07 09:00 | 2018-02-07 10:00 | 228 |  |  |  | 2017-10-23 11:12 | 2017-10-23 13:12 | -104d | 0d | Thị Phượng | 1h | 17.5 |
| 230 | 1.6.3.1.22 | Danh sách mẫu dự án/nhóm công việc | 1h | 2018-02-07 10:00 | 2018-02-07 11:00 | 229 |  |  |  | 2017-10-23 13:12 | 2017-10-23 14:12 | -104d | 0d | Thị Phượng | 1h | 17.5 |
| 231 | 1.6.3.1.23 | Xem chi tiết mẫu dự án/nhóm công việc | 1h | 2018-02-07 11:00 | 2018-02-07 12:00 | 230 |  |  |  | 2017-10-23 14:12 | 2017-10-23 15:12 | -104d | 0d | Thị Phượng | 1h | 17.5 |
| 232 | 1.6.3.1.24 | Cập nhật mẫu dự án/nhóm công việc | 2h | 2018-02-07 13:00 | 2018-02-07 15:00 | 231 |  |  |  | 2017-10-23 15:12 | 2017-10-24 08:12 | -104d | 0d | Thị Phượng | 2h | 26.25 |
| 233 | 1.6.3.1.25 | Danh sách dự án/nhóm công việc (Dạng List) | 1h | 2018-02-07 15:00 | 2018-02-07 16:00 | 232 |  |  |  | 2017-10-24 08:12 | 2017-10-24 09:12 | -104d | 0d | Thị Phượng | 1h | 17.5 |
| 234 | 1.6.3.1.26 | Danh sách dự án/nhóm công việc (Dạng Kanban) | 2h | 2018-02-07 16:00 | 2018-02-08 09:00 | 233 |  |  |  | 2017-10-24 09:12 | 2017-10-24 11:12 | -104d | 0d | Thị Phượng | 2h | 26.25 |
| 235 | 1.6.3.1.27 | Danh sách dự án/nhóm công việc (Dạng Gantt) | 2h | 2018-02-08 09:00 | 2018-02-08 11:00 | 234 |  |  |  | 2017-10-24 11:12 | 2017-10-24 14:12 | -104d | 0d | Thị Phượng | 2h | 26.25 |
| 236 | 1.6.3.1.28 | Cập nhật dự án/nhóm công việc | 1h | 2018-02-08 11:00 | 2018-02-08 12:00 | 235 |  |  |  | 2017-10-24 14:12 | 2017-10-24 15:12 | -104d | 0d | Thị Phượng | 1h | 17.5 |
| 237 | 1.6.3.1.29 | Xem dự án/nhóm công việc | 1h | 2018-02-08 13:00 | 2018-02-08 14:00 | 236 |  |  |  | 2017-10-24 15:12 | 2017-10-24 16:12 | -104d | 0d | Thị Phượng | 1h | 17.5 |
| 238 | 1.6.3.1.30 | Chọn hợp đồng | 1h | 2018-02-08 14:00 | 2018-02-08 15:00 | 237 |  |  |  | 2017-10-24 16:12 | 2017-10-25 08:12 | -104d | 0d | Thị Phượng | 1h | 17.5 |
| 239 | 1.6.3.1.31 | Chọn nhân sự | 1h | 2018-02-08 15:00 | 2018-02-08 16:00 | 238 |  |  |  | 2017-10-25 08:12 | 2017-10-25 09:12 | -104d | 0d | Thị Phượng | 1h | 17.5 |
| 240 | 1.6.3.1.32 | Chọn phòng ban | 1h | 2018-02-08 16:00 | 2018-02-08 17:00 | 239 |  |  |  | 2017-10-25 09:12 | 2017-10-25 10:12 | -104d | 0d | Thị Phượng | 1h | 17.5 |

| ID | WBS | Task | Type | Duration | Start | Finish | Predecessors | Baseline start | Baseline finish | Baseline duration | Baseline 1 start | Baseline 1 finish | Total slack | Free slack | Resources | Work | Cost |
| --- | --- | --- | --- | --- | --- | --- | --- | --- | --- | --- | --- | --- | --- | --- | --- | --- | --- |
| 241 | 1.6.4 | **Release 4** |  | 4.5d | 2018-01-09 15:00 | 2018-01-16 10:00 | 153 |  |  |  | 2017-10-27 13:00 | 2017-11-02 17:00 | -86.25d | 0d |  | 36h | 498.75 |
| 242 | 1.6.4.1 | **Quản lý công việc** |  | 4.5d | 2018-01-09 15:00 | 2018-01-16 10:00 |  |  |  |  | 2017-10-27 13:00 | 2017-11-02 17:00 | -86.25d | 0d |  | 36h | 498.75 |
| 243 | 1.6.4.1.1 | Danh sách công việc (Dạng List) |  | 1h | 2018-01-09 15:00 | 2018-01-09 16:00 | 87 |  |  |  | 2017-10-27 13:00 | 2017-10-27 14:00 | -86.25d | 0d | Hoàng Vũ | 1h | 17.5 |
| 244 | 1.6.4.1.2 | Danh sách công việc (Dạng Kanban) |  | 1h | 2018-01-09 16:00 | 2018-01-09 17:00 | 243 |  |  |  | 2017-10-27 14:00 | 2017-10-27 15:00 | -86.25d | 0d | Hoàng Vũ | 1h | 17.5 |
| 245 | 1.6.4.1.3 | Danh sách công việc (Dạng Lịch) |  | 1h | 2018-01-10 08:00 | 2018-01-10 09:00 | 244 |  |  |  | 2017-10-27 15:00 | 2017-10-27 16:00 | -86.25d | 0d | Hoàng Vũ | 1h | 17.5 |
| 246 | 1.6.4.1.4 | Danh sách công việc (Dạng Gantt) |  | 1h | 2018-01-10 09:00 | 2018-01-10 10:00 | 245 |  |  |  | 2017-10-27 16:00 | 2017-10-27 17:00 | -86.25d | 0d | Hoàng Vũ | 1h | 17.5 |
| 247 | 1.6.4.1.5 | Import công việc |  | 4h | 2018-01-10 10:00 | 2018-01-10 15:00 | 246 |  |  |  | 2017-10-30 08:00 | 2017-10-30 12:00 | -86.25d | 0d | Hoàng Vũ | 4h | 43.75 |
| 248 | 1.6.4.1.6 | Cập nhật công việc |  | 2h | 2018-01-10 15:00 | 2018-01-10 17:00 | 247 |  |  |  | 2017-10-30 13:00 | 2017-10-30 15:00 | -86.25d | 0d | Hoàng Vũ | 2h | 26.25 |
| 249 | 1.6.4.1.7 | Xem thông tin công việc |  | 2h | 2018-01-11 08:00 | 2018-01-11 10:00 | 248 |  |  |  | 2017-10-30 15:00 | 2017-10-30 17:00 | -86.25d | 0d | Hoàng Vũ | 2h | 26.25 |
| 250 | 1.6.4.1.8 | Chọn công việc trước |  | 2h | 2018-01-11 10:00 | 2018-01-11 12:00 | 249 |  |  |  | 2017-10-31 08:00 | 2017-10-31 10:00 | -86.25d | 0d | Hoàng Vũ | 2h | 26.25 |
| 251 | 1.6.4.1.9 | Nhập checklist công việc |  | 1h | 2018-01-11 13:00 | 2018-01-11 14:00 | 250 |  |  |  | 2017-10-31 10:00 | 2017-10-31 11:00 | -86.25d | 0d | Hoàng Vũ | 1h | 17.5 |
| 252 | 1.6.4.1.10 | Cập nhật công việc hàng loạt |  | 2h | 2018-01-11 14:00 | 2018-01-11 16:00 | 251 |  |  |  | 2017-10-31 11:00 | 2017-10-31 14:00 | -86.25d | 0d | Hoàng Vũ | 2h | 26.25 |
| 253 | 1.6.4.1.11 | Thiết kế Dasboard chung |  | 3h | 2018-01-11 16:00 | 2018-01-12 10:00 | 252 |  |  |  | 2017-10-31 14:00 | 2017-10-31 17:00 | -86.25d | 0d | Hoàng Vũ | 3h | 35 |
| 254 | 1.6.4.1.12 | Thiết lập thời gian lặp lại |  | 1h | 2018-01-12 10:00 | 2018-01-12 11:00 | 253 |  |  |  | 2017-11-01 08:00 | 2017-11-01 09:00 | -86.25d | 0d | Hoàng Vũ | 1h | 17.5 |
| 255 | 1.6.4.1.13 | Màn hình calendar hiển thị theo dạng lịch |  | 2h | 2018-01-12 11:00 | 2018-01-12 14:00 | 254 |  |  |  | 2017-11-01 09:00 | 2017-11-01 11:00 | -86.25d | 0d | Hoàng Vũ | 2h | 26.25 |
| 256 | 1.6.4.1.14 | Màn hình calendar hiển thị theo dạng list |  | 2h | 2018-01-12 14:00 | 2018-01-12 16:00 | 255 |  |  |  | 2017-11-01 11:00 | 2017-11-01 14:00 | -86.25d | 0d | Hoàng Vũ | 2h | 26.25 |
| 257 | 1.6.4.1.15 | Lập lịch |  | 2h | 2018-01-12 16:00 | 2018-01-15 09:00 | 256 |  |  |  | 2017-11-01 14:00 | 2017-11-01 16:00 | -86.25d | 0d | Hoàng Vũ | 2h | 26.25 |
| 258 | 1.6.4.1.16 | Gửi mail (cho Nhân sự tham gia) -> gửi mail nội bộ |  | 1h | 2018-01-15 09:00 | 2018-01-15 10:00 | 257 |  |  |  | 2017-11-01 16:00 | 2017-11-01 17:00 | -86.25d | 0d | Hoàng Vũ | 1h | 17.5 |
| 259 | 1.6.4.1.17 | Thiết lập gửi mail |  | 1h | 2018-01-15 10:00 | 2018-01-15 11:00 | 258 |  |  |  | 2017-11-02 08:00 | 2017-11-02 09:00 | -86.25d | 0d | Hoàng Vũ | 1h | 17.5 |
| 260 | 1.6.4.1.18 | Thiết lập cảnh báo |  | 1h | 2018-01-15 11:00 | 2018-01-15 12:00 | 259 |  |  |  | 2017-11-02 09:00 | 2017-11-02 10:00 | -86.25d | 0d | Hoàng Vũ | 1h | 17.5 |
| 261 | 1.6.4.1.19 | Focus sheet |  | 2h | 2018-01-15 13:00 | 2018-01-15 15:00 | 260 |  |  |  | 2017-11-02 10:00 | 2017-11-02 12:00 | -86.25d | 0d | Hoàng Vũ | 2h | 26.25 |
| 262 | 1.6.4.1.20 | Báo cáo công việc theo dự án |  | 2h | 2018-01-15 15:00 | 2018-01-15 17:00 | 261 |  |  |  | 2017-11-02 13:00 | 2017-11-02 15:00 | -86.25d | 0d | Hoàng Vũ | 2h | 26.25 |
| 263 | 1.6.4.1.21 | Báo cáo công việc theo nhân viên |  | 2h | 2018-01-16 08:00 | 2018-01-16 10:00 | 262 |  |  |  | 2017-11-02 15:00 | 2017-11-02 17:00 | -86.25d | 0d | Hoàng Vũ | 2h | 26.25 |
| 264 | 1.7 | Test Completed | milestone | 0d | 2017-08-17 08:00 | 2017-08-17 08:00 |  | 2017-08-17 08:00 | 2017-08-17 08:00 | 0d | 2017-08-17 08:00 | 2017-08-17 08:00 | 21d |  |  |  |  |

| ID | WBS | Task | Duration | Start | Finish | Predecessors | Baseline start | Baseline finish | Baseline duration | Baseline 1 start | Baseline 1 finish | Total slack | Free slack | Constraint | Resources | Work | Cost | Baseline cost |
| --- | --- | --- | --- | --- | --- | --- | --- | --- | --- | --- | --- | --- | --- | --- | --- | --- | --- | --- |
| 265 | 1.8 | **Fix bug** | 122d | 2017-08-23 09:00 | 2018-02-12 09:00 |  | 2017-08-18 08:00 | 2017-08-23 14:15 | 3.66d? | 2017-08-23 09:00 | 2017-11-02 17:00 | -105.12d | 0d |  |  | 82.8h | 1,398.25 | 157.5 |
| 266 | 1.8.1 | **Release 1** | 0.53d | 2017-08-23 09:00 | 2017-08-23 14:15 | 90 | 2017-08-23 09:00 | 2017-08-23 14:15 | 0.53d | 2017-08-23 09:00 | 2017-08-23 14:15 | 0.34d | 0d | finish no later than 2017-08-23 17:00 |  | 7h | 157.5 | 157.5 |
| 267 | 1.8.1.1 | **Quản lý hoa hồng** | 0.53d | 2017-08-23 09:00 | 2017-08-23 14:15 |  | 2017-08-23 09:00 | 2017-08-23 14:15 | 0.53d | 2017-08-23 09:00 | 2017-08-23 14:15 | 0.34d |  |  |  | 7h | 157.5 | 157.5 |
| 268 | 1.8.1.1.1 | Cập nhật cửa hàng | 0.5h | 2017-08-23 09:00 | 2017-08-23 09:30 |  | 2017-08-23 09:00 | 2017-08-23 09:30 | 0.5h | 2017-08-23 09:00 | 2017-08-23 09:30 | 0.53d | 0d |  | Quang Hoàng | 0.5h | 13.12 | 13.12 |
| 269 | 1.8.1.1.2 | Thiết lập thông tin công ty | 0.25h | 2017-08-23 09:00 | 2017-08-23 09:15 |  | 2017-08-23 09:00 | 2017-08-23 09:15 | 0.25h | 2017-08-23 09:00 | 2017-08-23 09:15 | 0.34d | 0d |  | Thành Luân | 0.25h | 10.94 | 10.94 |
| 270 | 1.8.1.1.3 | Danh mục mức hoa hồng theo doanh thu lũy kế | 0.75h | 2017-08-23 09:15 | 2017-08-23 10:00 | 269 | 2017-08-23 09:15 | 2017-08-23 10:00 | 0.75h | 2017-08-23 09:15 | 2017-08-23 10:00 | 0.34d | 0d |  | Thành Luân | 0.75h | 15.31 | 15.31 |
| 271 | 1.8.1.1.4 | Cập nhật mức hoa hồng theo doanh thu lũy kế | 0.75h | 2017-08-23 10:00 | 2017-08-23 10:45 | 270 | 2017-08-23 10:00 | 2017-08-23 10:45 | 0.75h | 2017-08-23 10:00 | 2017-08-23 10:45 | 0.34d | 0d |  | Thành Luân | 0.75h | 15.31 | 15.31 |
| 272 | 1.8.1.1.5 | Xem chi tiết mức hoa hồng theo doanh thu lũy kế | 0.75h | 2017-08-23 10:45 | 2017-08-23 11:30 | 271 | 2017-08-23 10:45 | 2017-08-23 11:30 | 0.75h | 2017-08-23 10:45 | 2017-08-23 11:30 | 0.34d | 0d |  | Thành Luân | 0.75h | 15.31 | 15.31 |
| 273 | 1.8.1.1.6 | Cập nhật hội viên | 0.25h | 2017-08-23 11:30 | 2017-08-23 11:45 | 272 | 2017-08-23 11:30 | 2017-08-23 11:45 | 0.25h | 2017-08-23 11:30 | 2017-08-23 11:45 | 0.34d | 0d |  | Thành Luân | 0.25h | 10.94 | 10.94 |
| 274 | 1.8.1.1.7 | Sơ đồ cây nhân viên hưởng hoa hồng | 0.75h | 2017-08-23 09:30 | 2017-08-23 10:15 | 268 | 2017-08-23 09:30 | 2017-08-23 10:15 | 0.75h | 2017-08-23 09:30 | 2017-08-23 10:15 | 0.53d | 0d |  | Quang Hoàng | 0.75h | 15.31 | 15.31 |
| 275 | 1.8.1.1.8 | Báo cáo chi tiết huê hồng từng nhân viên, nhập mã nhân viên để in báo cáo chi tiết | 0.75h | 2017-08-23 10:15 | 2017-08-23 11:00 | 274 | 2017-08-23 10:15 | 2017-08-23 11:00 | 0.75h | 2017-08-23 10:15 | 2017-08-23 11:00 | 0.53d | 0d |  | Quang Hoàng | 0.75h | 15.31 | 15.31 |
| 276 | 1.8.1.1.9 | Báo cáo tổng hợp huê hồng từng nhân viên, nhập mã nhân viên để in báo cáo tổng hợp | 0.75h | 2017-08-23 11:00 | 2017-08-23 11:45 | 275 | 2017-08-23 11:00 | 2017-08-23 11:45 | 0.75h | 2017-08-23 11:00 | 2017-08-23 11:45 | 0.53d |  |  | Quang Hoàng | 0.75h | 15.31 | 15.31 |
| 277 | 1.8.1.1.10 | Báo cáo chi tiết tất cả nhân viên hưởng huê hồng trong tháng | 0.75h | 2017-08-23 11:45 | 2017-08-23 13:30 | 273 | 2017-08-23 11:45 | 2017-08-23 13:30 | 0.75h | 2017-08-23 11:45 | 2017-08-23 13:30 | 0.34d | 0d |  | Thành Luân | 0.75h | 15.31 | 15.31 |
| 278 | 1.8.1.1.11 | Báo cáo tổng hợp tất cả nhân viên hưởng huê hồng trong tháng | 0.75h | 2017-08-23 13:30 | 2017-08-23 14:15 | 277 | 2017-08-23 13:30 | 2017-08-23 14:15 | 0.75h | 2017-08-23 13:30 | 2017-08-23 14:15 | 0.34d |  |  | Thành Luân | 0.75h | 15.31 | 15.31 |
| 279 | 1.8.2 | **Release 2** | 0.23d | 2017-10-04 11:30 | 2017-10-04 14:18 | 103 | 2017-08-18 08:00 | 2017-08-18 17:00 | 8h? | 2017-10-04 11:30 | 2017-10-04 14:18 | -12.66d | 0d |  |  | 1.8h | 129.5 |  |
| 280 | 1.8.2.1 | **Gộp đối tượng khách hàng** | 0.12d | 2017-10-04 11:30 | 2017-10-04 13:30 |  |  |  |  | 2017-10-04 11:30 | 2017-10-04 13:30 | -12.66d | 0d |  |  | 1h | 52.5 |  |
| 281 | 1.8.2.1.1 | Danh mục khách hàng | 0.2h | 2017-10-04 11:30 | 2017-10-04 11:42 |  |  |  |  | 2017-10-04 11:30 | 2017-10-04 11:42 | -12.66d | 0d |  | Quang Hoàng | 0.2h | 10.5 |  |
| 282 | 1.8.2.1.2 | Cập nhật khách hàng | 0.2h | 2017-10-04 11:42 | 2017-10-04 11:54 | 281 |  |  |  | 2017-10-04 11:42 | 2017-10-04 11:54 | -12.66d | 0d |  | Quang Hoàng | 0.2h | 10.5 |  |
| 283 | 1.8.2.1.3 | Xem chi tiết khách hàng | 0.2h | 2017-10-04 11:54 | 2017-10-04 13:06 | 282 |  |  |  | 2017-10-04 11:54 | 2017-10-04 13:06 | -12.66d | 0d |  | Quang Hoàng | 0.2h | 10.5 |  |
| 284 | 1.8.2.1.4 | In lịch sử thông tin khách hàng | 0.2h | 2017-10-04 13:06 | 2017-10-04 13:18 | 283 |  |  |  | 2017-10-04 13:06 | 2017-10-04 13:18 | -12.66d | 0d |  | Quang Hoàng | 0.2h | 10.5 |  |
| 285 | 1.8.2.1.5 | Import khách hàng | 0.2h | 2017-10-04 13:18 | 2017-10-04 13:30 | 284 |  |  |  | 2017-10-04 13:18 | 2017-10-04 13:30 | -12.66d | 0d |  | Quang Hoàng | 0.2h | 10.5 |  |
| 286 | 1.8.2.2 | **Call center** | 0.1d | 2017-10-04 13:30 | 2017-10-04 14:18 |  |  |  |  | 2017-10-04 13:30 | 2017-10-04 14:18 | -12.66d | 0d |  |  | 0.8h | 77 |  |
| 287 | 1.8.2.2.1 | Hỗ trợ | 0.1h | 2017-10-04 13:30 | 2017-10-04 13:36 | 285 |  |  |  | 2017-10-04 13:30 | 2017-10-04 13:36 | -12.66d | 0d |  | Quang Hoàng | 0.1h | 9.62 |  |
| 288 | 1.8.2.2.2 | Gọi đến | 0.1h | 2017-10-04 13:36 | 2017-10-04 13:42 | 287 |  |  |  | 2017-10-04 13:36 | 2017-10-04 13:42 | -12.66d | 0d |  | Quang Hoàng | 0.1h | 9.62 |  |
| 289 | 1.8.2.2.3 | Lịch sử cuộc gọi | 0.1h | 2017-10-04 13:42 | 2017-10-04 13:48 | 288 |  |  |  | 2017-10-04 13:42 | 2017-10-04 13:48 | -12.66d | 0d |  | Quang Hoàng | 0.1h | 9.62 |  |
| 290 | 1.8.2.2.4 | Công nợ | 0.1h | 2017-10-04 13:48 | 2017-10-04 13:54 | 289 |  |  |  | 2017-10-04 13:48 | 2017-10-04 13:54 | -12.66d | 0d |  | Quang Hoàng | 0.1h | 9.62 |  |
| 291 | 1.8.2.2.5 | Thêm nhanh khách hàng | 0.1h | 2017-10-04 13:54 | 2017-10-04 14:00 | 290 |  |  |  | 2017-10-04 13:54 | 2017-10-04 14:00 | -12.66d | 0d |  | Quang Hoàng | 0.1h | 9.62 |  |
| 292 | 1.8.2.2.6 | Thêm nhanh đơn hàng | 0.1h | 2017-10-04 14:00 | 2017-10-04 14:06 | 291 |  |  |  | 2017-10-04 14:00 | 2017-10-04 14:06 | -12.66d | 0d |  | Quang Hoàng | 0.1h | 9.62 |  |
| 293 | 1.8.2.2.7 | Chọn khách hàng | 0.1h | 2017-10-04 14:06 | 2017-10-04 14:12 | 292 |  |  |  | 2017-10-04 14:06 | 2017-10-04 14:12 | -12.66d | 0d |  | Quang Hoàng | 0.1h | 9.62 |  |
| 294 | 1.8.2.2.8 | Xem nhanh công nợ | 0.1h | 2017-10-04 14:12 | 2017-10-04 14:18 | 293 |  |  |  | 2017-10-04 14:12 | 2017-10-04 14:18 | -12.66d | 0d |  | Quang Hoàng | 0.1h | 9.62 |  |

Notes:
- 280: Gộp khách hàng bên CRM vào hội viên bên POS
- 286: sửa những chỗ liên quan khách hàng

| ID | WBS | Task | Duration | Start | Finish | Predecessors | Baseline start | Baseline finish | Baseline duration | Baseline 1 start | Baseline 1 finish | Total slack | Free slack | Resources | Work | Cost |
| --- | --- | --- | --- | --- | --- | --- | --- | --- | --- | --- | --- | --- | --- | --- | --- | --- |
| 295 | 1.8.3 | **Release 3** | 4d | 2018-02-02 10:00 | 2018-02-08 10:00 | 119 | 2017-08-17 08:00 | 2017-08-17 17:00 | 8h? | 2017-10-18 13:12 | 2017-10-23 16:12 | -105.12d | 0d |  | 38h | 612.5 |
| 296 | 1.8.3.1 | **Quản lý công việc** | 4d | 2018-02-02 10:00 | 2018-02-08 10:00 |  |  |  |  | 2017-10-18 13:12 | 2017-10-23 16:12 | -105.12d | 0d |  | 38h | 612.5 |
| 297 | 1.8.3.1.1 | Danh mục thiết lập thời gian làm việc | 1h | 2018-02-02 10:00 | 2018-02-02 11:00 |  |  |  |  | 2017-10-18 13:12 | 2017-10-18 14:12 | -99.62d | 0d | Thành Luân | 1h | 17.5 |
| 298 | 1.8.3.1.2 | Xem chi tiết thời gian làm việc | 1h | 2018-02-02 11:00 | 2018-02-02 12:00 | 297 |  |  |  | 2017-10-18 14:12 | 2017-10-18 15:12 | -99.62d | 0d | Thành Luân | 1h | 17.5 |
| 299 | 1.8.3.1.3 | Thiết lập thời gian làm việc | 1h | 2018-02-02 13:00 | 2018-02-02 14:00 | 298 |  |  |  | 2017-10-18 15:12 | 2017-10-18 16:12 | -99.62d | 0d | Thành Luân | 1h | 17.5 |
| 300 | 1.8.3.1.4 | Thiết lập hệ thống | 1h | 2018-02-02 10:00 | 2018-02-02 11:00 |  |  |  |  | 2017-10-18 16:12 | 2017-10-19 08:12 | -102.75d | 0d | Thanh Lam | 1h | 17.5 |
| 301 | 1.8.3.1.5 | Sửa giao diện menu tổng | 1h | 2018-02-02 10:00 | 2018-02-02 11:00 | 165 |  |  |  | 2017-10-18 13:12 | 2017-10-18 14:12 | -105.12d | 0d | Quang Hoàng | 1h | 17.5 |
| 302 | 1.8.3.1.6 | Điều kiện tìm kiếm động ở các màn hình tìm kiếm | 2h | 2018-02-02 11:00 | 2018-02-02 14:00 | 301 |  |  |  | 2017-10-18 14:12 | 2017-10-18 16:12 | -105.12d | 0d | Quang Hoàng | 2h | 26.25 |
| 303 | 1.8.3.1.7 | Group dữ liệu theo ý người dùng khi hiển thị dạng list | 2h | 2018-02-02 14:00 | 2018-02-02 16:00 | 302 |  |  |  | 2017-10-18 16:12 | 2017-10-19 09:12 | -105.12d | 0d | Quang Hoàng | 2h | 26.25 |
| 304 | 1.8.3.1.8 | Thông báo | 2h | 2018-02-02 16:00 | 2018-02-05 09:00 | 303 |  |  |  | 2017-10-19 09:12 | 2017-10-19 11:12 | -105.12d | 0d | Quang Hoàng | 2h | 26.25 |
| 305 | 1.8.3.1.9 | Danh mục thông báo | 1h | 2018-02-02 11:00 | 2018-02-02 12:00 | 300 |  |  |  | 2017-10-19 08:12 | 2017-10-19 09:12 | -102.75d | 0d | Thanh Lam | 1h | 17.5 |
| 306 | 1.8.3.1.10 | Cập nhật thông báo | 1h | 2018-02-02 13:00 | 2018-02-02 14:00 | 305 |  |  |  | 2017-10-19 09:12 | 2017-10-19 10:12 | -102.75d | 0d | Thanh Lam | 1h | 17.5 |
| 307 | 1.8.3.1.11 | Xem thông báo | 1h | 2018-02-02 14:00 | 2018-02-02 15:00 | 306 |  |  |  | 2017-10-19 10:12 | 2017-10-19 11:12 | -102.75d | 0d | Thanh Lam | 1h | 17.5 |
| 308 | 1.8.3.1.12 | Danh mục quy trình | 1h | 2018-02-02 15:00 | 2018-02-02 16:00 | 307 |  |  |  | 2017-10-19 11:12 | 2017-10-19 13:12 | -102.75d | 0d | Thanh Lam | 1h | 17.5 |
| 309 | 1.8.3.1.13 | Xem chi tiết quy trình | 1h | 2018-02-02 16:00 | 2018-02-02 17:00 | 308 |  |  |  | 2017-10-19 13:12 | 2017-10-19 14:12 | -102.75d | 0d | Thanh Lam | 1h | 17.5 |
| 310 | 1.8.3.1.14 | Cập nhật quy trình | 1h | 2018-02-05 08:00 | 2018-02-05 09:00 | 309 |  |  |  | 2017-10-19 14:12 | 2017-10-19 15:12 | -102.75d | 0d | Thanh Lam | 1h | 17.5 |
| 311 | 1.8.3.1.15 | Danh mục bước | 1h | 2018-02-05 09:00 | 2018-02-05 10:00 | 310 |  |  |  | 2017-10-19 15:12 | 2017-10-19 16:12 | -102.75d | 0d | Thanh Lam | 1h | 17.5 |
| 312 | 1.8.3.1.16 | Xem chi tiết bước | 1h | 2018-02-05 10:00 | 2018-02-05 11:00 | 311 |  |  |  | 2017-10-19 16:12 | 2017-10-20 08:12 | -102.25d | 0d | Thanh Lam | 1h | 17.5 |
| 313 | 1.8.3.1.17 | Cập nhật bước | 1h | 2018-02-05 11:00 | 2018-02-05 12:00 | 312 |  |  |  | 2017-10-20 08:12 | 2017-10-20 09:12 | -102.25d | 0d | Thanh Lam | 1h | 17.5 |
| 314 | 1.8.3.1.18 | Cập nhật mẫu công việc theo bước | 1h | 2018-02-05 13:00 | 2018-02-05 14:00 | 313 |  |  |  | 2017-10-20 09:12 | 2017-10-20 10:12 | -102.25d | 0d | Thanh Lam | 1h | 17.5 |
| 315 | 1.8.3.1.19 | Danh mục trạng thái | 1h | 2018-02-05 14:00 | 2018-02-05 15:00 | 314 |  |  |  | 2017-10-20 10:12 | 2017-10-20 11:12 | -102.25d | 0d | Thanh Lam | 1h | 17.5 |
| 316 | 1.8.3.1.20 | Xem chi tiết trạng thái | 1h | 2018-02-05 15:00 | 2018-02-05 16:00 | 315 |  |  |  | 2017-10-20 11:12 | 2017-10-20 13:12 | -102.25d | 0d | Thanh Lam | 1h | 17.5 |
| 317 | 1.8.3.1.21 | Cập nhật trạng thái | 1h | 2018-02-05 16:00 | 2018-02-05 17:00 | 316 |  |  |  | 2017-10-20 13:12 | 2017-10-20 14:12 | -102.25d | 0d | Thanh Lam | 1h | 17.5 |
| 318 | 1.8.3.1.22 | Danh sách mẫu dự án/nhóm công việc | 1h | 2018-02-06 13:00 | 2018-02-06 14:00 | 317 |  |  |  | 2017-10-20 14:12 | 2017-10-20 15:12 | -102.75d | 0d | Thanh Lam | 1h | 17.5 |
| 319 | 1.8.3.1.23 | Xem chi tiết mẫu dự án/nhóm công việc | 1h | 2018-02-06 14:00 | 2018-02-06 15:00 | 318 |  |  |  | 2017-10-20 15:12 | 2017-10-20 16:12 | -102.75d | 0d | Thanh Lam | 1h | 17.5 |
| 320 | 1.8.3.1.24 | Cập nhật mẫu dự án/nhóm công việc | 2h | 2018-02-06 15:00 | 2018-02-06 17:00 | 319 |  |  |  | 2017-10-20 16:12 | 2017-10-23 09:12 | -102.75d | 0d | Thanh Lam | 2h | 26.25 |
| 321 | 1.8.3.1.25 | Danh sách dự án/nhóm công việc (Dạng List) | 1h | 2018-02-07 08:00 | 2018-02-07 09:00 | 320 |  |  |  | 2017-10-23 09:12 | 2017-10-23 10:12 | -102.75d | 0d | Thanh Lam | 1h | 17.5 |
| 322 | 1.8.3.1.26 | Danh sách dự án/nhóm công việc (Dạng Kanban) | 2h | 2018-02-05 09:00 | 2018-02-05 11:00 | 304 |  |  |  | 2017-10-19 11:12 | 2017-10-19 14:12 | -105.12d | 0d | Quang Hoàng | 2h | 26.25 |
| 323 | 1.8.3.1.27 | Danh sách dự án/nhóm công việc (Dạng Gantt) | 2h | 2018-02-05 11:00 | 2018-02-05 14:00 | 322 |  |  |  | 2017-10-19 14:12 | 2017-10-19 16:12 | -105.12d | 0d | Quang Hoàng | 2h | 26.25 |
| 324 | 1.8.3.1.28 | Cập nhật dự án/nhóm công việc | 1h | 2018-02-07 09:00 | 2018-02-07 10:00 | 321 |  |  |  | 2017-10-23 10:12 | 2017-10-23 11:12 | -102.75d | 0d | Thanh Lam | 1h | 17.5 |
| 325 | 1.8.3.1.29 | Xem dự án/nhóm công việc | 1h | 2018-02-07 10:00 | 2018-02-07 11:00 | 324 |  |  |  | 2017-10-23 11:12 | 2017-10-23 13:12 | -102.75d | 0d | Thanh Lam | 1h | 17.5 |
| 326 | 1.8.3.1.30 | Chọn hợp đồng | 1h | 2018-02-07 11:00 | 2018-02-07 12:00 | 325 |  |  |  | 2017-10-23 13:12 | 2017-10-23 14:12 | -102.75d | 0d | Thanh Lam | 1h | 17.5 |
| 327 | 1.8.3.1.31 | Chọn nhân sự | 1h | 2018-02-08 08:00 | 2018-02-08 09:00 | 326 |  |  |  | 2017-10-23 14:12 | 2017-10-23 15:12 | -103.25d | 0d | Thanh Lam | 1h | 17.5 |
| 328 | 1.8.3.1.32 | Chọn phòng ban | 1h | 2018-02-08 09:00 | 2018-02-08 10:00 | 327 |  |  |  | 2017-10-23 15:12 | 2017-10-23 16:12 | -103.25d | 0d | Thanh Lam | 1h | 17.5 |

| ID | WBS | Task | Type | Duration | Start | Finish | Predecessors | Baseline start | Baseline finish | Baseline duration | Baseline 1 start | Baseline 1 finish | Total slack | Free slack | Resources | Work | Cost | Baseline cost |
| --- | --- | --- | --- | --- | --- | --- | --- | --- | --- | --- | --- | --- | --- | --- | --- | --- | --- | --- |
| 329 | 1.8.4 | **Release 4** |  | 4.5d | 2018-02-05 14:00 | 2018-02-12 09:00 | 153 |  |  |  | 2017-10-27 13:00 | 2017-11-02 17:00 | -105.12d | 0d |  | 36h | 498.75 |  |
| 330 | 1.8.4.1 | **Quản lý công việc** |  | 4.5d | 2018-02-05 14:00 | 2018-02-12 09:00 |  |  |  |  | 2017-10-27 13:00 | 2017-11-02 17:00 | -105.12d | 0d |  | 36h | 498.75 |  |
| 331 | 1.8.4.1.1 | Danh sách công việc (Dạng List) |  | 1h | 2018-02-05 14:00 | 2018-02-05 15:00 | 323 |  |  |  | 2017-10-27 13:00 | 2017-10-27 14:00 | -105.12d | 0d | Quang Hoàng | 1h | 17.5 |  |
| 332 | 1.8.4.1.2 | Danh sách công việc (Dạng Kanban) |  | 1h | 2018-02-05 15:00 | 2018-02-05 16:00 | 331 |  |  |  | 2017-10-27 14:00 | 2017-10-27 15:00 | -105.12d | 0d | Quang Hoàng | 1h | 17.5 |  |
| 333 | 1.8.4.1.3 | Danh sách công việc (Dạng Lịch) |  | 1h | 2018-02-05 16:00 | 2018-02-05 17:00 | 332 |  |  |  | 2017-10-27 15:00 | 2017-10-27 16:00 | -105.12d | 0d | Quang Hoàng | 1h | 17.5 |  |
| 334 | 1.8.4.1.4 | Danh sách công việc (Dạng Gantt) |  | 1h | 2018-02-06 08:00 | 2018-02-06 09:00 | 333 |  |  |  | 2017-10-27 16:00 | 2017-10-27 17:00 | -105.12d | 0d | Quang Hoàng | 1h | 17.5 |  |
| 335 | 1.8.4.1.5 | Import công việc |  | 4h | 2018-02-06 09:00 | 2018-02-06 14:00 | 334 |  |  |  | 2017-10-30 08:00 | 2017-10-30 12:00 | -105.12d | 0d | Quang Hoàng | 4h | 43.75 |  |
| 336 | 1.8.4.1.6 | Cập nhật công việc |  | 2h | 2018-02-06 14:00 | 2018-02-06 16:00 | 335 |  |  |  | 2017-10-30 13:00 | 2017-10-30 15:00 | -105.12d | 0d | Quang Hoàng | 2h | 26.25 |  |
| 337 | 1.8.4.1.7 | Xem thông tin công việc |  | 2h | 2018-02-06 16:00 | 2018-02-07 09:00 | 336 |  |  |  | 2017-10-30 15:00 | 2017-10-30 17:00 | -105.12d | 0d | Quang Hoàng | 2h | 26.25 |  |
| 338 | 1.8.4.1.8 | Chọn công việc trước |  | 2h | 2018-02-07 09:00 | 2018-02-07 11:00 | 337 |  |  |  | 2017-10-31 08:00 | 2017-10-31 10:00 | -105.12d | 0d | Quang Hoàng | 2h | 26.25 |  |
| 339 | 1.8.4.1.9 | Nhập checklist công việc |  | 1h | 2018-02-07 11:00 | 2018-02-07 12:00 | 338 |  |  |  | 2017-10-31 10:00 | 2017-10-31 11:00 | -105.12d | 0d | Quang Hoàng | 1h | 17.5 |  |
| 340 | 1.8.4.1.10 | Cập nhật công việc hàng loạt |  | 2h | 2018-02-07 13:00 | 2018-02-07 15:00 | 339 |  |  |  | 2017-10-31 11:00 | 2017-10-31 14:00 | -105.12d | 0d | Quang Hoàng | 2h | 26.25 |  |
| 341 | 1.8.4.1.11 | Thiết kế Dasboard chung |  | 3h | 2018-02-07 15:00 | 2018-02-08 09:00 | 340 |  |  |  | 2017-10-31 14:00 | 2017-10-31 17:00 | -105.12d | 0d | Quang Hoàng | 3h | 35 |  |
| 342 | 1.8.4.1.12 | Thiết lập thời gian lặp lại |  | 1h | 2018-02-08 09:00 | 2018-02-08 10:00 | 341 |  |  |  | 2017-11-01 08:00 | 2017-11-01 09:00 | -105.12d | 0d | Quang Hoàng | 1h | 17.5 |  |
| 343 | 1.8.4.1.13 | Màn hình calendar hiển thị theo dạng lịch |  | 2h | 2018-02-08 10:00 | 2018-02-08 12:00 | 342 |  |  |  | 2017-11-01 09:00 | 2017-11-01 11:00 | -105.12d | 0d | Quang Hoàng | 2h | 26.25 |  |
| 344 | 1.8.4.1.14 | Màn hình calendar hiển thị theo dạng list |  | 2h | 2018-02-08 13:00 | 2018-02-08 15:00 | 343 |  |  |  | 2017-11-01 11:00 | 2017-11-01 14:00 | -105.12d | 0d | Quang Hoàng | 2h | 26.25 |  |
| 345 | 1.8.4.1.15 | Lập lịch |  | 2h | 2018-02-08 15:00 | 2018-02-08 17:00 | 344 |  |  |  | 2017-11-01 14:00 | 2017-11-01 16:00 | -105.12d | 0d | Quang Hoàng | 2h | 26.25 |  |
| 346 | 1.8.4.1.16 | Gửi mail (cho Nhân sự tham gia) -> gửi mail nội bộ |  | 1h | 2018-02-09 08:00 | 2018-02-09 09:00 | 345 |  |  |  | 2017-11-01 16:00 | 2017-11-01 17:00 | -105.12d | 0d | Quang Hoàng | 1h | 17.5 |  |
| 347 | 1.8.4.1.17 | Thiết lập gửi mail |  | 1h | 2018-02-09 09:00 | 2018-02-09 10:00 | 346 |  |  |  | 2017-11-02 08:00 | 2017-11-02 09:00 | -105.12d | 0d | Quang Hoàng | 1h | 17.5 |  |
| 348 | 1.8.4.1.18 | Thiết lập cảnh báo |  | 1h | 2018-02-09 10:00 | 2018-02-09 11:00 | 347 |  |  |  | 2017-11-02 09:00 | 2017-11-02 10:00 | -105.12d | 0d | Quang Hoàng | 1h | 17.5 |  |
| 349 | 1.8.4.1.19 | Focus sheet |  | 2h | 2018-02-09 11:00 | 2018-02-09 14:00 | 348 |  |  |  | 2017-11-02 10:00 | 2017-11-02 12:00 | -105.12d | 0d | Quang Hoàng | 2h | 26.25 |  |
| 350 | 1.8.4.1.20 | Báo cáo công việc theo dự án |  | 2h | 2018-02-09 14:00 | 2018-02-09 16:00 | 349 |  |  |  | 2017-11-02 13:00 | 2017-11-02 15:00 | -105.12d | 0d | Quang Hoàng | 2h | 26.25 |  |
| 351 | 1.8.4.1.21 | Báo cáo công việc theo nhân viên |  | 2h | 2018-02-09 16:00 | 2018-02-12 09:00 | 350 |  |  |  | 2017-11-02 15:00 | 2017-11-02 17:00 | -105.12d | 0d | Quang Hoàng | 2h | 26.25 |  |
| 352 | 1.9 | Fix bug Completed | milestone | 0d | 2017-08-17 08:00 | 2017-08-17 08:00 |  | 2017-08-17 08:00 | 2017-08-17 08:00 | 0d | 2017-08-17 08:00 | 2017-08-17 08:00 | 21d |  |  |  |  |  |
| 353 | 1.10 | Release đợt 1 | milestone | 0h | 2017-08-23 14:15 | 2017-08-23 14:15 | 266 | 2017-08-23 14:15 | 2017-08-23 14:15 | 0h | 2017-08-23 14:15 | 2017-08-23 14:15 | 16.34d |  | Hoàng Vũ; Phát Danh; Quang Hoàng; Thành Luân; Thị Phượng |  | 52.5 | 52.5 |
| 354 | 1.11 | Release đợt 2 | milestone | 0h | 2017-10-04 14:18 | 2017-10-04 14:18 | 279 | 2017-08-18 17:00 | 2017-08-18 17:00 | 0h | 2017-10-04 14:18 | 2017-10-04 14:18 | -12.66d | 0d | Hoàng Vũ; Phát Danh; Quang Hoàng; Thành Luân; Thị Phượng |  | 52.5 | 52.5 |
| 355 | 1.12 | Release đợt 3 | milestone | 0h | 2017-08-17 08:00 | 2017-08-17 08:00 |  | 2017-08-18 17:00 | 2017-08-18 17:00 | 0h | 2017-08-17 08:00 | 2017-08-17 08:00 | 21d |  | Hoàng Vũ; Phát Danh; Quang Hoàng; Thành Luân; Thị Phượng |  | 52.5 | 52.5 |
